Schedule from MS Project, 2015-05-11 to 2015-09-02.

## Calendars

- Standard: Mon-Fri 08:00-12:00, 13:00-17:00; Sat-Sun off. Exceptions (off unless hours are given): 2015-06-22 to 2015-06-26 (Nghỉ hè).

## Resources

| Resource |
| --- |
| NamNT |
| MaiTTT |
| PhuongBB |
| AnhTT |
| SangNV |
| Nam' |

## Schedule

| ID | WBS | Task | Type | Duration | Start | Finish | Predecessors | Total slack | Free slack | Constraint | Resources | Work |
| --- | --- | --- | --- | --- | --- | --- | --- | --- | --- | --- | --- | --- |
| 1 | 1 | **BL** |  | 78d | 2015-05-11 08:00 | 2015-09-02 17:00 |  | 0d |  |  |  | 1376h |
| 2 | 1.1 | **Initiation** |  | 13.1d | 2015-05-11 08:00 | 2015-05-28 08:48 |  | 0d |  |  |  | 227.2h |
| 3 | 1.1.1 | System feasible study |  | 0.3d | 2015-05-11 08:00 | 2015-05-11 10:24 |  | 0d |  |  | NamNT; MaiTTT; PhuongBB; AnhTT | 9.6h |
| 4 | 1.1.2 | Define business situation |  | 0.4d | 2015-05-11 10:24 | 2015-05-11 14:36 | 3 | 0d |  |  | NamNT; MaiTTT; PhuongBB; AnhTT | 12.8h |
| 5 | 1.1.3 | Develop project idea |  | 0.4d | 2015-05-11 14:36 | 2015-05-12 08:48 | 4 | 0d |  |  | NamNT; MaiTTT; PhuongBB; AnhTT | 12.8h |
| 6 | 1.1.4 | Define project and system scope |  | 0.5d | 2015-05-12 08:48 | 2015-05-12 13:48 | 5 | 0d |  |  | NamNT; MaiTTT; PhuongBB; AnhTT | 16h |
| 7 | 1.1.5 | Prepare project |  | 1d | 2015-05-12 13:48 | 2015-05-13 13:48 | 6 | 0d |  |  | NamNT; MaiTTT; PhuongBB; AnhTT | 32h |
| 8 | 1.1.6 | Kick-off meeting | milestone | 0.4d | 2015-05-13 13:48 | 2015-05-13 17:00 | 7 | 0d |  |  | NamNT; MaiTTT; PhuongBB; AnhTT | 12.8h |
| 9 | 1.1.7 | Q & A Management |  | 0.3d | 2015-05-14 08:00 | 2015-05-14 10:24 | 8 | 0.4d | 0d |  | MaiTTT | 2.4h |
| 10 | 1.1.8 | **Technologies** |  | 6.4d | 2015-05-19 14:36 | 2015-05-28 08:48 |  | 64.9d |  |  |  | 14.4h |
| 11 | 1.1.8.1 | Research development technologies |  | 0.5d | 2015-05-19 14:36 | 2015-05-22 16:12 | 8 | 64.9d | 0d |  | NamNT | 4h |
| 12 | 1.1.8.2 | Install and configure Android Studio and Android SDK |  | 0.6d | 2015-05-22 16:12 | 2015-05-25 16:12 | 11 | 67.1d |  | finish no earlier than 2015-05-22 17:00 | NamNT; MaiTTT | 4.8h |
| 13 | 1.1.8.3 | Install and configure NetBeans, PHP |  | 0.3d | 2015-05-22 16:12 | 2015-05-25 09:36 | 11 | 64.9d | 0d | finish no earlier than 2015-05-19 17:00 | NamNT | 2.4h |
| 14 | 1.1.8.4 | Study web service |  | 0.4d | 2015-05-25 09:36 | 2015-05-28 08:48 | 13 | 64.9d |  | finish no earlier than 2015-05-20 17:00 | NamNT | 3.2h |
| 15 | 1.1.9 | **SRS/PP/Concept design Review checklist** |  | 2d | 2015-05-14 10:24 | 2015-05-18 10:24 |  | 0.4d |  |  |  | 16h |
| 16 | 1.1.9.1 | Develop review checklist |  | 1.5d | 2015-05-14 10:24 | 2015-05-15 15:24 | 9 | 0.4d | 0d |  | MaiTTT | 12h |
| 17 | 1.1.9.2 | Review review checklist |  | 0.2d | 2015-05-15 15:24 | 2015-05-15 17:00 | 16 | 0.4d | 0d |  | PhuongBB | 1.6h |
| 18 | 1.1.9.3 | Update review checklist |  | 0.3d | 2015-05-18 08:00 | 2015-05-18 10:24 | 17 | 0.4d | 0d |  | PhuongBB | 2.4h |
| 19 | 1.1.9.4 | Complete review checklist | milestone | 0d | 2015-05-18 10:24 | 2015-05-18 10:24 | 18 | 0.4d |  |  | MaiTTT |  |
| 20 | 1.1.10 | **Requirements** |  | 3.4d | 2015-05-14 08:00 | 2015-05-19 11:12 |  | 0d |  |  |  | 25.6h |
| 21 | 1.1.10.1 | **User Requirements Specification** |  | 2.7d | 2015-05-14 08:00 | 2015-05-18 14:36 |  | 0d |  |  |  | 20h |
| 22 | 1.1.10.1.1 | Collect business requirements and processes |  | 0.5d | 2015-05-14 08:00 | 2015-05-14 12:00 | 8 | 0d |  |  | PhuongBB | 4h |
| 23 | 1.1.10.1.2 | Create draft requirements |  | 1d | 2015-05-14 13:00 | 2015-05-15 12:00 | 22 | 0d |  |  | PhuongBB | 8h |
| 24 | 1.1.10.1.3 | Complete draft requirements | milestone | 0d | 2015-05-15 12:00 | 2015-05-15 12:00 | 23 | 0d |  |  | PhuongBB |  |
| 25 | 1.1.10.1.4 | Develop main function and processes |  | 1d | 2015-05-15 13:00 | 2015-05-18 14:36 | 24 | 0d |  |  | PhuongBB | 8h |
| 26 | 1.1.10.2 | Review User Requirement Specification with checklist |  | 0.3d | 2015-05-18 14:36 | 2015-05-18 17:00 | 25, 19 | 0d |  |  | MaiTTT | 2.4h |
| 27 | 1.1.10.3 | Update User Requirement Specification |  | 0.4d | 2015-05-19 08:00 | 2015-05-19 11:12 | 26 | 0d |  |  | PhuongBB | 3.2h |
| 28 | 1.1.10.4 | Complete User Requirement Specification | milestone | 0d | 2015-05-19 11:12 | 2015-05-19 11:12 | 27 | 0d |  |  | NamNT |  |

| ID | WBS | Task | Type | Duration | Start | Finish | Predecessors | Total slack | Free slack | Resources | Work |
| --- | --- | --- | --- | --- | --- | --- | --- | --- | --- | --- | --- |
| 29 | 1.1.11 | **Concept design** |  | 2.5d | 2015-05-15 13:00 | 2015-05-19 17:00 |  | 0d |  |  | 16h |
| 30 | 1.1.11.1 | Create draft concept design |  | 1d | 2015-05-15 13:00 | 2015-05-18 17:00 | 24 | 0d |  | AnhTT | 8h |
| 31 | 1.1.11.2 | Review concept design with checklist |  | 0.5d | 2015-05-19 08:00 | 2015-05-19 12:00 | 30, 19 | 0d |  | MaiTTT | 4h |
| 32 | 1.1.11.3 | Update concept design |  | 0.5d | 2015-05-19 13:00 | 2015-05-19 17:00 | 31 | 0d |  | AnhTT | 4h |
| 33 | 1.1.11.4 | Complete concept design | milestone | 0d | 2015-05-19 17:00 | 2015-05-19 17:00 | 32 | 0d |  | NamNT |  |
| 34 | 1.1.12 | **Project plan** |  | 7.3d | 2015-05-14 08:00 | 2015-05-25 10:24 |  | 0d |  |  | 51.2h |
| 35 | 1.1.12.1 | Develop project definition |  | 0.7d | 2015-05-14 08:00 | 2015-05-14 14:36 | 8 | 0d |  | NamNT | 5.6h |
| 36 | 1.1.12.2 | Develop Work Breakdown Structure |  | 0.9d | 2015-05-14 14:36 | 2015-05-15 13:48 | 35 | 0d |  | NamNT | 7.2h |
| 37 | 1.1.12.3 | Create Project Schedule |  | 2d | 2015-05-15 13:48 | 2015-05-19 13:48 | 36 | 0d |  | NamNT | 16h |
| 38 | 1.1.12.4 | Create Configuration Management Plan version 1.0 |  | 0.8d | 2015-05-20 13:00 | 2015-05-21 10:24 | 37 | 0d |  | NamNT | 6.4h |
| 39 | 1.1.12.5 | Create Project Plan (first version) |  | 1.5d | 2015-05-21 10:24 | 2015-05-22 15:24 | 38 | 0d |  | NamNT | 12h |
| 40 | 1.1.12.6 | Review Project Plan (first version) |  | 0.5d | 2015-05-22 15:24 | 2015-05-25 10:24 | 39 | 0d |  | MaiTTT; PhuongBB | 4h |
| 41 | 1.1.12.7 | Complete Project Plan (final version) | milestone | 0d | 2015-05-25 10:24 | 2015-05-25 10:24 | 40 | 0d |  | NamNT |  |
| 42 | 1.1.13 | **Progress Report 1** |  | 0.7d | 2015-05-19 13:48 | 2015-05-20 10:24 |  | 0d |  |  | 5.6h |
| 43 | 1.1.13.1 | Develop Progress Report 1 |  | 0.4d | 2015-05-19 13:48 | 2015-05-19 17:00 | 37 | 0d |  | NamNT | 3.2h |
| 44 | 1.1.13.2 | Review Progress Report 1 |  | 0.2d | 2015-05-20 08:00 | 2015-05-20 09:36 | 43 | 0d |  | MaiTTT | 1.6h |
| 45 | 1.1.13.3 | Update Progress Report 1 |  | 0.1d | 2015-05-20 09:36 | 2015-05-20 10:24 | 44 | 0d |  | NamNT | 0.8h |
| 46 | 1.1.13.4 | Complete Progress Report 1 | milestone | 0d | 2015-05-20 10:24 | 2015-05-20 10:24 | 45 | 0d |  | NamNT |  |
| 47 | 1.1.14 | Submit PP, URS, Concept Design | milestone | 0d | 2015-05-25 10:24 | 2015-05-25 10:24 | 41, 46, 28, 33 | 0d |  | NamNT |  |
| 48 | 1.2 | **Solution** |  | 35.4d | 2015-05-25 10:24 | 2015-07-20 14:36 |  | 0d |  |  | 565.6h |
| 49 | 1.2.1 | **Requirements** |  | 7.2d | 2015-05-25 10:24 | 2015-06-03 12:00 |  | 0d |  |  | 129.6h |
| 50 | 1.2.1.1 | **Software Requirements Specification** |  | 7.2d | 2015-05-25 10:24 | 2015-06-03 12:00 |  | 0d |  |  | 129.6h |
| 51 | 1.2.1.1.1 | **Functional Requirement Specification** |  | 4.9d | 2015-05-25 10:24 | 2015-06-01 09:36 |  | 0d |  |  | 101.6h |
| 52 | 1.2.1.1.1.1 | **Bus Driver Module** |  | 0.9d | 2015-05-25 10:24 | 2015-05-26 09:36 |  | 0.1d |  |  | 4.8h |
| 53 | 1.2.1.1.1.1.1 | Send bus info module |  | 0.6d | 2015-05-25 10:24 | 2015-05-26 09:36 | 47 | 0.1d | 0d | NamNT | 4.8h |

| ID | WBS | Task | Duration | Start | Finish | Predecessors | Total slack | Free slack | Resources | Work |
| --- | --- | --- | --- | --- | --- | --- | --- | --- | --- | --- |
| 54 | 1.2.1.1.1.2 | **Bus Rider Module** | 4.9d | 2015-05-25 10:24 | 2015-06-01 09:36 |  | 0d |  |  | 96.8h |
| 55 | 1.2.1.1.1.2.1 | **Common module** | 0.5d | 2015-05-27 15:24 | 2015-05-28 10:24 |  | 64.7d |  |  | 4h |
| 56 | 1.2.1.1.1.2.1.1 | Change app setting | 0.5d | 2015-05-27 15:24 | 2015-05-28 10:24 | 47 | 64.7d |  | NamNT | 4h |
| 57 | 1.2.1.1.1.2.2 | **Account Management module** | 1.6d | 2015-05-26 09:36 | 2015-05-27 15:24 |  | 2.5d |  |  | 11.2h |
| 58 | 1.2.1.1.1.2.2.1 | Log in | 0.6d | 2015-05-26 09:36 | 2015-05-26 15:24 | 47 | 2.5d | 0d | NamNT | 4.8h |
| 59 | 1.2.1.1.1.2.2.2 | Log out | 0.3d | 2015-05-26 15:24 | 2015-05-27 08:48 | 58 | 2.5d | 0d | NamNT | 2.4h |
| 60 | 1.2.1.1.1.2.2.3 | Change account info | 0.2d | 2015-05-27 08:48 | 2015-05-27 10:24 | 59 | 2.5d | 0d | NamNT | 1.6h |
| 61 | 1.2.1.1.1.2.2.4 | Forgot password | 0.3d | 2015-05-27 10:24 | 2015-05-27 15:24 | 60 | 2.5d |  | NamNT | 2.4h |
| 62 | 1.2.1.1.1.2.3 | **Bus module** | 2.7d | 2015-05-25 10:24 | 2015-05-27 17:00 |  | 2.3d |  |  | 21.6h |
| 63 | 1.2.1.1.1.2.3.1 | View bus list | 0.3d | 2015-05-25 10:24 | 2015-05-25 13:48 | 47 | 2.3d | 0d | PhuongBB | 2.4h |
| 64 | 1.2.1.1.1.2.3.2 | View bus info | 0.3d | 2015-05-25 13:48 | 2015-05-25 16:12 | 63 | 2.3d | 0d | PhuongBB | 2.4h |
| 65 | 1.2.1.1.1.2.3.3 | View bus route | 0.4d | 2015-05-25 16:12 | 2015-05-26 10:24 | 64 | 2.3d | 0d | PhuongBB | 3.2h |
| 66 | 1.2.1.1.1.2.3.4 | View nearest bus | 0.6d | 2015-05-26 10:24 | 2015-05-26 16:12 | 65 | 2.3d | 0d | PhuongBB | 4.8h |
| 67 | 1.2.1.1.1.2.3.5 | View bus map | 0.6d | 2015-05-26 16:12 | 2015-05-27 12:00 | 66 | 2.3d | 0d | PhuongBB | 4.8h |
| 68 | 1.2.1.1.1.2.3.6 | View bus near me | 0.5d | 2015-05-27 13:00 | 2015-05-27 17:00 | 67 | 2.3d |  | PhuongBB | 4h |
| 69 | 1.2.1.1.1.2.4 | **Path Finder module** | 2.7d | 2015-05-26 09:36 | 2015-05-28 16:12 |  | 0.1d |  |  | 21.6h |
| 70 | 1.2.1.1.1.2.4.1 | Find path | 1d | 2015-05-26 09:36 | 2015-05-27 09:36 | 53 | 0.1d | 0d | AnhTT | 8h |
| 71 | 1.2.1.1.1.2.4.2 | View paths found | 0.4d | 2015-05-27 09:36 | 2015-05-27 13:48 | 70 | 0.1d | 0d | AnhTT | 3.2h |
| 72 | 1.2.1.1.1.2.4.3 | View path detail | 0.7d | 2015-05-27 13:48 | 2015-05-28 10:24 | 71 | 0.1d | 0d | AnhTT | 5.6h |
| 73 | 1.2.1.1.1.2.4.4 | View direction | 0.6d | 2015-05-28 10:24 | 2015-05-28 16:12 | 72 | 0.1d | 0d | AnhTT | 4.8h |
| 74 | 1.2.1.1.1.2.5 | **Reminder module** | 1.3d | 2015-05-28 16:12 | 2015-06-01 09:36 |  | 0.1d |  |  | 10.4h |
| 75 | 1.2.1.1.1.2.5.1 | View bus reminder | 0.5d | 2015-05-28 16:12 | 2015-05-29 11:12 | 73 | 0.1d | 0d | AnhTT | 4h |
| 76 | 1.2.1.1.1.2.5.2 | Add reminder | 0.2d | 2015-05-29 11:12 | 2015-05-29 13:48 | 75 | 0.1d | 0d | AnhTT | 1.6h |
| 77 | 1.2.1.1.1.2.5.3 | Edit reminder | 0.3d | 2015-05-29 13:48 | 2015-05-29 16:12 | 76 | 0.1d | 0d | AnhTT | 2.4h |
| 78 | 1.2.1.1.1.2.5.4 | Delete reminder | 0.1d | 2015-05-29 16:12 | 2015-05-29 17:00 | 77 | 0.1d | 0d | AnhTT | 0.8h |
| 79 | 1.2.1.1.1.2.5.5 | Suspend/Unsuspend a chosen reminder | 0.2d | 2015-06-01 08:00 | 2015-06-01 09:36 | 78 | 0.1d |  | AnhTT | 1.6h |

| ID | WBS | Task | Type | Duration | Start | Finish | Predecessors | Total slack | Resources | Work |
| --- | --- | --- | --- | --- | --- | --- | --- | --- | --- | --- |
| 80 | 1.2.1.1.1.2.6 | **Track module** |  | 1.2d | 2015-05-25 10:24 | 2015-05-26 12:00 |  | 0d |  | 9.6h |
| 81 | 1.2.1.1.1.2.6.1 | Tracking |  | 1d | 2015-05-25 10:24 | 2015-05-26 10:24 | 47 | 0d | MaiTTT | 8h |
| 82 | 1.2.1.1.1.2.6.2 | Cancel track |  | 0.2d | 2015-05-26 10:24 | 2015-05-26 12:00 | 81 | 0d | MaiTTT | 1.6h |
| 83 | 1.2.1.1.1.2.7 | **Favorite module** |  | 2.3d | 2015-05-26 13:00 | 2015-05-28 15:24 |  | 0d |  | 18.4h |
| 84 | 1.2.1.1.1.2.7.1 | View favorite places |  | 0.4d | 2015-05-26 13:00 | 2015-05-26 16:12 | 82 | 0d | MaiTTT | 3.2h |
| 85 | 1.2.1.1.1.2.7.2 | Add favorite places |  | 0.2d | 2015-05-26 16:12 | 2015-05-27 08:48 | 84 | 0d | MaiTTT | 1.6h |
| 86 | 1.2.1.1.1.2.7.3 | Edit favorite places |  | 0.3d | 2015-05-27 08:48 | 2015-05-27 11:12 | 85 | 0d | MaiTTT | 2.4h |
| 87 | 1.2.1.1.1.2.7.4 | Delete favorite places |  | 0.2d | 2015-05-27 11:12 | 2015-05-27 13:48 | 86 | 0d | MaiTTT | 1.6h |
| 88 | 1.2.1.1.1.2.7.5 | Search favorite places |  | 0.2d | 2015-05-27 13:48 | 2015-05-27 15:24 | 87 | 0d | MaiTTT | 1.6h |
| 89 | 1.2.1.1.1.2.7.6 | View favorite buses |  | 0.4d | 2015-05-27 15:24 | 2015-05-28 09:36 | 88 | 0d | MaiTTT | 3.2h |
| 90 | 1.2.1.1.1.2.7.7 | Add favorite buses |  | 0.2d | 2015-05-28 09:36 | 2015-05-28 11:12 | 89 | 0d | MaiTTT | 1.6h |
| 91 | 1.2.1.1.1.2.7.8 | Delete favorite buses |  | 0.2d | 2015-05-28 11:12 | 2015-05-28 13:48 | 90 | 0d | MaiTTT | 1.6h |
| 92 | 1.2.1.1.1.2.7.9 | Search favorite buses |  | 0.2d | 2015-05-28 13:48 | 2015-05-28 15:24 | 91 | 0d | MaiTTT | 1.6h |
| 93 | 1.2.1.1.2 | **Non-functional Requirement Specification** |  | 1.5d | 2015-05-28 15:24 | 2015-06-01 10:24 |  | 0d |  | 12h |
| 94 | 1.2.1.1.2.1 | Develop User Interface Requirement |  | 1d | 2015-05-28 15:24 | 2015-05-29 15:24 | 92 | 0d | MaiTTT | 8h |
| 95 | 1.2.1.1.2.2 | Develop Performance Requirement |  | 0.5d | 2015-05-29 15:24 | 2015-06-01 10:24 | 94 | 0d | NamNT | 4h |
| 96 | 1.2.1.1.3 | Review Software Requirement Specification with checklist |  | 1d | 2015-06-01 15:24 | 2015-06-02 17:00 | 53, 61, 68, 73, 79, 82, 92, 95 | 0d | MaiTTT | 8h |
| 97 | 1.2.1.1.4 | Update Software Requirement Specification |  | 0.5d | 2015-06-03 08:00 | 2015-06-03 12:00 | 96 | 0d | AnhTT; PhuongBB | 8h |
| 98 | 1.2.1.1.5 | Complete Software Requirement Specification | milestone | 0d | 2015-06-03 12:00 | 2015-06-03 12:00 | 97 | 0d | NamNT |  |
| 99 | 1.2.2 | **Design** |  | 20.3d | 2015-05-29 15:24 | 2015-07-06 08:48 |  | 0d |  | 264h |
| 100 | 1.2.2.1 | **Design Review checklist** |  | 1.3d | 2015-05-29 15:24 | 2015-06-02 08:48 |  | 0d |  | 10.4h |
| 101 | 1.2.2.1.1 | Develop review checklist |  | 1d | 2015-05-29 15:24 | 2015-06-01 15:24 | 94 | 0d | MaiTTT | 8h |
| 102 | 1.2.2.1.2 | Review review checklist |  | 0.1d | 2015-06-01 15:24 | 2015-06-01 16:12 | 101 | 0d | PhuongBB | 0.8h |
| 103 | 1.2.2.1.3 | Update review checklist |  | 0.2d | 2015-06-01 16:12 | 2015-06-02 08:48 | 102 | 0d | MaiTTT | 1.6h |
| 104 | 1.2.2.1.4 | Complete review checklist | milestone | 0d | 2015-06-02 08:48 | 2015-06-02 08:48 | 103 | 0d | MaiTTT |  |

| ID | WBS | Task | Type | Duration | Start | Finish | Predecessors | Total slack | Free slack | Constraint | Resources | Work |
| --- | --- | --- | --- | --- | --- | --- | --- | --- | --- | --- | --- | --- |
| 105 | 1.2.2.2 | **Architecture design** |  | 2d | 2015-06-03 13:00 | 2015-06-05 12:00 |  | 0d |  |  |  | 16h |
| 106 | 1.2.2.2.1 | Define system structure and collect system features |  | 1d | 2015-06-03 13:00 | 2015-06-04 12:00 | 98 | 0d |  |  | NamNT | 8h |
| 107 | 1.2.2.2.2 | Study & choose System Architecture |  | 0.5d | 2015-06-04 13:00 | 2015-06-04 17:00 | 106 | 0d |  |  | NamNT | 4h |
| 108 | 1.2.2.2.3 | Review Architecture Design with checklist |  | 0.3d | 2015-06-05 08:00 | 2015-06-05 10:24 | 104, 107 | 0d |  |  | MaiTTT | 2.4h |
| 109 | 1.2.2.2.4 | Update Architecture Design |  | 0.2d | 2015-06-05 10:24 | 2015-06-05 12:00 | 108 | 0d |  |  | NamNT | 1.6h |
| 110 | 1.2.2.2.5 | Complete System Architecture version 1.0 | milestone | 0d | 2015-06-05 12:00 | 2015-06-05 12:00 | 109 | 0d |  |  | NamNT |  |
| 111 | 1.2.2.3 | **Detailed design** |  | 15.6d | 2015-06-05 13:00 | 2015-07-06 08:48 |  | 0d |  |  |  | 139.2h |
| 112 | 1.2.2.3.1 | **User Interface design** |  | 13.6d | 2015-06-05 13:00 | 2015-07-02 08:48 |  | 0d |  |  |  | 123.2h |
| 113 | 1.2.2.3.1.1 | **Bus Driver Module** |  | 0.4d | 2015-06-11 13:48 | 2015-06-11 17:00 |  | 9.1d |  |  |  | 3.2h |
| 114 | 1.2.2.3.1.1.1 | Send bus info module |  | 0.4d | 2015-06-11 13:48 | 2015-06-11 17:00 | 110 | 9.1d |  | finish no earlier than 2015-06-05 17:00 | NamNT | 3.2h |
| 115 | 1.2.2.3.1.2 | **Bus Rider Module** |  | 13.6d | 2015-06-05 13:00 | 2015-07-02 08:48 |  | 0d |  |  |  | 120h |
| 116 | 1.2.2.3.1.2.1 | **Common module** |  | 1.4d | 2015-06-10 09:36 | 2015-06-11 13:48 |  | 9.5d |  |  |  | 11.2h |
| 117 | 1.2.2.3.1.2.1.1 | Change app setting |  | 1.4d | 2015-06-10 09:36 | 2015-06-11 13:48 | 110 | 9.5d |  |  | NamNT | 11.2h |
| 118 | 1.2.2.3.1.2.2 | **Account Management module** |  | 3.6d | 2015-06-18 14:36 | 2015-07-01 10:24 |  | 0.8d |  |  |  | 12.8h |
| 119 | 1.2.2.3.1.2.2.1 | Log in |  | 0.6d | 2015-06-18 14:36 | 2015-06-30 10:24 | 110 | 0.8d | 0d |  | AnhTT | 4.8h |
| 120 | 1.2.2.3.1.2.2.2 | Log out |  | 0.3d | 2015-06-30 10:24 | 2015-06-30 13:48 | 119 | 0.8d | 0d |  | AnhTT | 2.4h |
| 121 | 1.2.2.3.1.2.2.3 | View account profile |  | 0.2d | 2015-06-30 13:48 | 2015-06-30 15:24 | 120 | 0.8d | 0d |  | AnhTT | 1.6h |
| 122 | 1.2.2.3.1.2.2.4 | Change account info |  | 0.2d | 2015-06-30 15:24 | 2015-06-30 17:00 | 121 | 0.8d | 0d |  | AnhTT | 1.6h |
| 123 | 1.2.2.3.1.2.2.5 | Forgot password |  | 0.3d | 2015-07-01 08:00 | 2015-07-01 10:24 | 122 | 0.8d |  |  | AnhTT | 2.4h |
| 124 | 1.2.2.3.1.2.3 | **Bus module** |  | 5.9d | 2015-06-10 14:36 | 2015-06-18 13:48 |  | 4.5d |  |  |  | 32h |
| 125 | 1.2.2.3.1.2.3.1 | View bus list |  | 0.3d | 2015-06-10 14:36 | 2015-06-11 10:24 | 110 | 4.8d | 0d |  | MaiTTT | 2.4h |
| 126 | 1.2.2.3.1.2.3.2 | View bus info |  | 0.3d | 2015-06-11 10:24 | 2015-06-11 13:48 | 125 | 4.8d | 0d |  | MaiTTT | 2.4h |
| 127 | 1.2.2.3.1.2.3.3 | View bus route |  | 0.6d | 2015-06-11 13:48 | 2015-06-12 09:36 | 126 | 4.8d | 0d |  | MaiTTT | 4.8h |
| 128 | 1.2.2.3.1.2.3.4 | View nearest bus |  | 1d | 2015-06-12 09:36 | 2015-06-15 09:36 | 127 | 4.8d | 0d | start no earlier than 2015-06-10 08:00 | MaiTTT | 8h |
| 129 | 1.2.2.3.1.2.3.5 | View bus map |  | 0.8d | 2015-06-15 16:12 | 2015-06-16 14:36 | 128 | 4.5d | 0d | start no earlier than 2015-06-11 08:00 | MaiTTT | 6.4h |
| 130 | 1.2.2.3.1.2.3.6 | View bus near me |  | 1d | 2015-06-17 13:48 | 2015-06-18 13:48 | 129 | 4.5d |  | start no earlier than 2015-06-15 08:00 | MaiTTT | 8h |

| ID | WBS | Task | Type | Duration | Start | Finish | Predecessors | Total slack | Free slack | Constraint | Resources | Work |
| --- | --- | --- | --- | --- | --- | --- | --- | --- | --- | --- | --- | --- |
| 131 | 1.2.2.3.1.2.4 | **Path Finder module** |  | 2.7d | 2015-06-05 13:00 | 2015-06-10 09:36 |  | 2.8d |  |  |  | 21.6h |
| 132 | 1.2.2.3.1.2.4.1 | Find path |  | 1d | 2015-06-05 13:00 | 2015-06-08 12:00 | 110 | 2.8d | 0d |  | NamNT | 8h |
| 133 | 1.2.2.3.1.2.4.2 | View paths found |  | 0.4d | 2015-06-08 13:00 | 2015-06-08 16:12 | 132 | 2.8d | 0d |  | NamNT | 3.2h |
| 134 | 1.2.2.3.1.2.4.3 | View path detail |  | 0.7d | 2015-06-08 16:12 | 2015-06-09 13:48 | 133 | 2.8d | 0d |  | NamNT | 5.6h |
| 135 | 1.2.2.3.1.2.4.4 | View direction |  | 0.6d | 2015-06-09 13:48 | 2015-06-10 09:36 | 134 | 2.8d | 0d |  | NamNT | 4.8h |
| 136 | 1.2.2.3.1.2.5 | **Reminder module** |  | 5.7d | 2015-06-15 09:36 | 2015-06-29 16:12 |  | 2.2d |  |  |  | 14.4h |
| 137 | 1.2.2.3.1.2.5.1 | View bus reminder |  | 0.5d | 2015-06-15 09:36 | 2015-06-15 14:36 | 135 | 3.1d | 0d |  | MaiTTT | 4h |
| 138 | 1.2.2.3.1.2.5.2 | Add reminder |  | 0.2d | 2015-06-15 14:36 | 2015-06-15 16:12 | 137 | 3.1d | 0.1d |  | MaiTTT | 1.6h |
| 139 | 1.2.2.3.1.2.5.3 | Edit reminder |  | 0.3d | 2015-06-16 14:36 | 2015-06-16 17:00 | 138 | 2.4d | 0d | start no earlier than 2015-06-16 08:00 | MaiTTT | 2.4h |
| 140 | 1.2.2.3.1.2.5.4 | Delete reminder |  | 0.1d | 2015-06-17 08:00 | 2015-06-17 08:48 | 139 | 2.4d | 0d |  | MaiTTT | 0.8h |
| 141 | 1.2.2.3.1.2.5.5 | Suspend/Unsuspend all reminder |  | 0.5d | 2015-06-17 08:48 | 2015-06-17 13:48 | 140 | 2.4d | 0d |  | MaiTTT | 4h |
| 142 | 1.2.2.3.1.2.5.6 | Suspend/Unsuspend a chosen reminder |  | 0.2d | 2015-06-18 13:48 | 2015-06-29 16:12 | 141 | 2.2d |  |  | MaiTTT | 1.6h |
| 143 | 1.2.2.3.1.2.6 | **Track module** |  | 1.2d | 2015-06-17 13:00 | 2015-06-18 14:36 |  | 0d |  |  |  | 9.6h |
| 144 | 1.2.2.3.1.2.6.1 | Tracking |  | 1d | 2015-06-17 13:00 | 2015-06-18 12:00 | 110 | 0d |  |  | AnhTT | 8h |
| 145 | 1.2.2.3.1.2.6.2 | Cancel track |  | 0.2d | 2015-06-18 13:00 | 2015-06-18 14:36 | 144 | 0d |  |  | AnhTT | 1.6h |
| 146 | 1.2.2.3.1.2.7 | **Favorite module** |  | 4.4d | 2015-06-18 14:36 | 2015-07-02 08:48 |  | 0d |  |  |  | 18.4h |
| 147 | 1.2.2.3.1.2.7.1 | View favorite places |  | 0.4d | 2015-06-18 14:36 | 2015-06-19 08:48 | 145 | 0d |  |  | MaiTTT | 3.2h |
| 148 | 1.2.2.3.1.2.7.2 | Add favorite places |  | 0.2d | 2015-06-19 08:48 | 2015-06-19 10:24 | 147 | 0d |  |  | MaiTTT | 1.6h |
| 149 | 1.2.2.3.1.2.7.3 | Edit favorite places |  | 0.3d | 2015-06-19 10:24 | 2015-06-19 13:48 | 148 | 0d |  |  | MaiTTT | 2.4h |
| 150 | 1.2.2.3.1.2.7.4 | Delete favorite places |  | 0.2d | 2015-06-19 13:48 | 2015-06-19 15:24 | 149 | 0d |  |  | MaiTTT | 1.6h |
| 151 | 1.2.2.3.1.2.7.5 | Search favorite places |  | 0.2d | 2015-06-19 15:24 | 2015-06-19 17:00 | 150 | 0d |  |  | MaiTTT | 1.6h |
| 152 | 1.2.2.3.1.2.7.6 | View favorite buses |  | 0.4d | 2015-06-29 08:00 | 2015-06-29 11:12 | 151 | 0d |  |  | MaiTTT | 3.2h |
| 153 | 1.2.2.3.1.2.7.7 | Add favorite buses |  | 0.2d | 2015-06-29 11:12 | 2015-06-29 13:48 | 152 | 0d |  | finish no earlier than 2015-06-19 17:00 | MaiTTT | 1.6h |
| 154 | 1.2.2.3.1.2.7.8 | Delete favorite buses |  | 0.2d | 2015-06-29 13:48 | 2015-06-29 15:24 | 153 | 0d |  |  | MaiTTT | 1.6h |
| 155 | 1.2.2.3.1.2.7.9 | Search favorite buses |  | 0.2d | 2015-07-01 16:12 | 2015-07-02 08:48 | 154 | 0d |  |  | MaiTTT | 1.6h |
| 156 | 1.2.2.3.2 | Review Detailed Design with checklist |  | 1d | 2015-07-02 13:48 | 2015-07-03 13:48 | 104, 114, 117, 123, 130, 135, 142, 145, 155 | 0d |  |  | MaiTTT | 8h |
| 157 | 1.2.2.3.3 | Update Detailed Design |  | 0.5d | 2015-07-03 13:48 | 2015-07-06 08:48 | 156 | 0d |  |  | AnhTT; MaiTTT | 8h |
| 158 | 1.2.2.3.4 | Complete Detailed Design version 1.0 | milestone | 0d | 2015-07-06 08:48 | 2015-07-06 08:48 | 157 | 0d |  |  | NamNT |  |

| ID | WBS | Task | Type | Duration | Start | Finish | Predecessors | Total slack | Free slack | Resources | Work |
| --- | --- | --- | --- | --- | --- | --- | --- | --- | --- | --- | --- |
| 159 | 1.2.2.4 | **Database design** |  | 11.3d | 2015-06-05 13:00 | 2015-06-29 15:24 |  | 0d |  |  | 60h |
| 160 | 1.2.2.4.1 | Create Databse Design draft version |  | 5d | 2015-06-05 13:00 | 2015-06-17 12:00 | 110 | 0d |  | AnhTT | 40h |
| 161 | 1.2.2.4.2 | Review Database Design with checklist |  | 0.5d | 2015-06-18 10:24 | 2015-06-18 15:24 | 103, 160 | 0d |  | PhuongBB | 4h |
| 162 | 1.2.2.4.3 | Update Database Design |  | 2d | 2015-06-18 15:24 | 2015-06-29 15:24 | 161 | 0d |  | AnhTT | 16h |
| 163 | 1.2.2.4.4 | Complete Database Design version 1.0 | milestone | 0d | 2015-06-29 15:24 | 2015-06-29 15:24 | 162 | 0d |  | AnhTT |  |
| 164 | 1.2.2.5 | **Class design** |  | 3.1d | 2015-06-29 15:24 | 2015-07-02 16:12 |  | 0d |  |  | 38.4h |
| 165 | 1.2.2.5.1 | Define class/component |  | 2.1d | 2015-06-29 15:24 | 2015-07-01 16:12 | 163 | 0d |  | NamNT; MaiTTT | 32h |
| 166 | 1.2.2.5.2 | Review Class Design with checklist |  | 0.5d | 2015-07-02 08:48 | 2015-07-02 13:48 | 165 | 0d |  | MaiTTT | 4h |
| 167 | 1.2.2.5.3 | Update Class Design |  | 0.3d | 2015-07-02 13:48 | 2015-07-02 16:12 | 166 | 0d |  | NamNT | 2.4h |
| 168 | 1.2.2.5.4 | Complete Class Design version 1.0 | milestone | 0d | 2015-07-02 16:12 | 2015-07-02 16:12 | 167 | 0d |  | NamNT |  |
| 169 | 1.2.2.6 | Complete design | milestone | 0d | 2015-07-06 08:48 | 2015-07-06 08:48 | 110, 158, 163, 168 | 0d |  | NamNT |  |
| 170 | 1.2.3 | **Progress Report 2** |  | 0.5d | 2015-07-06 08:48 | 2015-07-06 13:48 |  | 0d |  |  | 4h |
| 171 | 1.2.3.1 | Develop Progress Report 2 |  | 0.3d | 2015-07-06 08:48 | 2015-07-06 11:12 | 158, 163, 168 | 0d |  | NamNT | 2.4h |
| 172 | 1.2.3.2 | Review Progress Report 2 |  | 0.1d | 2015-07-06 11:12 | 2015-07-06 12:00 | 171 | 0d |  | NamNT | 0.8h |
| 173 | 1.2.3.3 | Update Progress Report 2 |  | 0.1d | 2015-07-06 13:00 | 2015-07-06 13:48 | 172 | 0d |  | NamNT | 0.8h |
| 174 | 1.2.3.4 | Complete Progress Report 2 | milestone | 0d | 2015-07-06 13:48 | 2015-07-06 13:48 | 173 | 0d |  | NamNT |  |
| 175 | 1.2.4 | Submit SRS,AD,DD | milestone | 0d | 2015-07-06 08:48 | 2015-07-06 08:48 | 98, 169 | 0d |  | NamNT |  |
| 176 | 1.2.5 | **Coding & Unit Testing** |  | 10.1d | 2015-07-06 13:48 | 2015-07-20 14:36 |  | 5.3d |  |  | 8h |
| 177 | 1.2.5.1 | **Bus Driver Module** |  | 10.1d | 2015-07-06 13:48 | 2015-07-20 14:36 |  | 5.3d |  |  | 8h |
| 178 | 1.2.5.1.1 | Send bus info module |  | 1d | 2015-07-06 13:48 | 2015-07-20 14:36 | 110, 158, 163, 168 | 5.3d | 0d | NamNT | 8h |
| 179 | 1.2.6 | **Testing** |  | 16.3d | 2015-06-05 13:00 | 2015-07-06 15:24 |  | 0d |  |  | 136h |
| 180 | 1.2.6.1 | **Test review checklist** |  | 3.2d | 2015-06-05 13:00 | 2015-06-10 14:36 |  | 0d |  |  | 24h |
| 181 | 1.2.6.1.1 | **Test plan review checklist** |  | 2.8d | 2015-06-05 13:00 | 2015-06-10 10:24 |  | 0d |  |  | 9.6h |
| 182 | 1.2.6.1.1.1 | Develop test plan review checklist |  | 0.6d | 2015-06-05 13:00 | 2015-06-08 08:48 | 110 | 0d |  | MaiTTT | 4.8h |
| 183 | 1.2.6.1.1.2 | Review test plan review checklist |  | 0.4d | 2015-06-08 08:48 | 2015-06-08 12:00 | 182 | 0d |  | AnhTT | 3.2h |
| 184 | 1.2.6.1.1.3 | Update test plan review checklist |  | 0.2d | 2015-06-10 08:48 | 2015-06-10 10:24 | 183 | 0d |  | MaiTTT | 1.6h |
| 185 | 1.2.6.1.1.4 | Complete test plan review checklist | milestone | 0d | 2015-06-10 10:24 | 2015-06-10 10:24 | 184 | 0d |  | MaiTTT |  |

| ID | WBS | Task | Type | Duration | Start | Finish | Predecessors | Total slack | Resources | Work |
| --- | --- | --- | --- | --- | --- | --- | --- | --- | --- | --- |
| 186 | 1.2.6.1.2 | **Test case review checklist** |  | 2.6d | 2015-06-08 08:48 | 2015-06-10 14:36 |  | 0d |  | 14.4h |
| 187 | 1.2.6.1.2.1 | Develop test case review checklist |  | 1d | 2015-06-08 08:48 | 2015-06-09 08:48 | 110 | 0d | MaiTTT | 8h |
| 188 | 1.2.6.1.2.2 | Review test case review checklist |  | 0.4d | 2015-06-09 08:48 | 2015-06-09 12:00 | 187 | 0d | AnhTT | 3.2h |
| 189 | 1.2.6.1.2.3 | Update test case review checklist |  | 0.4d | 2015-06-10 10:24 | 2015-06-10 14:36 | 188 | 0d | MaiTTT | 3.2h |
| 190 | 1.2.6.1.2.4 | Complete test case review checklist | milestone | 0d | 2015-06-10 14:36 | 2015-06-10 14:36 | 189 | 0d | MaiTTT |  |
| 191 | 1.2.6.1.3 | Complete review checklist | milestone | 0d | 2015-06-10 14:36 | 2015-06-10 14:36 | 185, 190 | 0d | MaiTTT |  |
| 192 | 1.2.6.2 | **Test plan** |  | 2d | 2015-06-09 08:48 | 2015-06-11 08:48 |  | 0d |  | 14.4h |
| 193 | 1.2.6.2.1 | Develop test plan |  | 1d | 2015-06-09 08:48 | 2015-06-10 08:48 | 110 | 0.2d | MaiTTT | 8h |
| 194 | 1.2.6.2.2 | Review test plan |  | 0.5d | 2015-06-10 10:24 | 2015-06-10 15:24 | 193, 185 | 0d | AnhTT | 4h |
| 195 | 1.2.6.2.3 | Update test plan |  | 0.3d | 2015-06-10 15:24 | 2015-06-11 08:48 | 194 | 0d | MaiTTT | 2.4h |
| 196 | 1.2.6.2.4 | Complete test plan | milestone | 0d | 2015-06-11 08:48 | 2015-06-11 08:48 | 195 | 0d | MaiTTT |  |
| 197 | 1.2.6.3 | **Test case** |  | 12.7d | 2015-06-11 08:48 | 2015-07-06 15:24 |  | 0d |  | 97.6h |
| 198 | 1.2.6.3.1 | **Unit test** |  | 5.2d | 2015-06-11 08:48 | 2015-06-18 10:24 |  | 0d |  | 41.6h |
| 199 | 1.2.6.3.1.1 | **Develop unit test case** |  | 3.2d | 2015-06-11 08:48 | 2015-06-16 10:24 |  | 0d |  | 25.6h |
| 200 | 1.2.6.3.1.1.1 | Bus driver module |  | 0.5d | 2015-06-11 08:48 | 2015-06-11 13:48 | 196 | 0d | PhuongBB | 4h |
| 201 | 1.2.6.3.1.1.2 | Sync module |  | 0.5d | 2015-06-11 13:48 | 2015-06-12 08:48 | 200 | 0d | PhuongBB | 4h |
| 202 | 1.2.6.3.1.1.3 | Bus module |  | 1d | 2015-06-12 08:48 | 2015-06-15 08:48 | 201 | 0d | PhuongBB | 8h |
| 203 | 1.2.6.3.1.1.4 | Search module |  | 0.5d | 2015-06-15 08:48 | 2015-06-15 13:48 | 202 | 0d | PhuongBB | 4h |
| 204 | 1.2.6.3.1.1.5 | Setting module |  | 0.7d | 2015-06-15 13:48 | 2015-06-16 10:24 | 203 | 0d | PhuongBB | 5.6h |
| 205 | 1.2.6.3.1.2 | Review unit test case |  | 1d | 2015-06-16 10:24 | 2015-06-17 10:24 | 202, 204 | 0d | PhuongBB | 8h |
| 206 | 1.2.6.3.1.3 | Update unit test case |  | 1d | 2015-06-17 10:24 | 2015-06-18 10:24 | 205 | 0d | PhuongBB | 8h |
| 207 | 1.2.6.3.1.4 | Complete unit test case | milestone | 0d | 2015-06-18 10:24 | 2015-06-18 10:24 | 206 | 0d | PhuongBB |  |
| 208 | 1.2.6.3.2 | **Integration test** |  | 4d | 2015-06-18 15:24 | 2015-07-01 15:24 |  | 0d |  | 32h |
| 209 | 1.2.6.3.2.1 | Develop integration test case |  | 2d | 2015-06-18 15:24 | 2015-06-29 15:24 | 207 | 0d | PhuongBB | 16h |
| 210 | 1.2.6.3.2.2 | Review integration test case |  | 1d | 2015-06-29 15:24 | 2015-06-30 15:24 | 209 | 0d | PhuongBB | 8h |
| 211 | 1.2.6.3.2.3 | Update integration test case |  | 1d | 2015-06-30 15:24 | 2015-07-01 15:24 | 210 | 0d | PhuongBB | 8h |
| 212 | 1.2.6.3.2.4 | Complete integration test case | milestone | 0d | 2015-07-01 15:24 | 2015-07-01 15:24 | 211 | 0d | PhuongBB |  |

| ID | WBS | Task | Type | Duration | Start | Finish | Predecessors | Total slack | Free slack | Constraint | Resources | Work |
| --- | --- | --- | --- | --- | --- | --- | --- | --- | --- | --- | --- | --- |
| 213 | 1.2.6.3.3 | **System test** |  | 3d | 2015-07-01 15:24 | 2015-07-06 15:24 |  | 0d |  |  |  | 24h |
| 214 | 1.2.6.3.3.1 | Develop system test case |  | 1d | 2015-07-01 15:24 | 2015-07-02 15:24 | 212 | 0d |  |  | PhuongBB | 8h |
| 215 | 1.2.6.3.3.2 | Review system test case |  | 1d | 2015-07-02 15:24 | 2015-07-03 15:24 | 214 | 0d |  |  | PhuongBB | 8h |
| 216 | 1.2.6.3.3.3 | Update system test case |  | 1d | 2015-07-03 15:24 | 2015-07-06 15:24 | 215 | 0d |  |  | PhuongBB | 8h |
| 217 | 1.2.6.3.3.4 | Complete system test case | milestone | 0d | 2015-07-06 15:24 | 2015-07-06 15:24 | 216 | 0d |  |  | PhuongBB |  |
| 218 | 1.2.7 | **Progress report 3** |  | 0.5d | 2015-07-07 08:00 | 2015-07-07 12:00 |  | 0d |  |  |  | 4h |
| 219 | 1.2.7.1 | Develop Progress Report 3 |  | 0.3d | 2015-07-07 08:00 | 2015-07-07 10:24 | 191, 207, 212, 217 | 0d |  |  | NamNT | 2.4h |
| 220 | 1.2.7.2 | Review Progress Report 3 |  | 0.1d | 2015-07-07 10:24 | 2015-07-07 11:12 | 219 | 0d |  |  | AnhTT | 0.8h |
| 221 | 1.2.7.3 | Update Progress Report 3 |  | 0.1d | 2015-07-07 11:12 | 2015-07-07 12:00 | 220 | 0d |  |  | NamNT | 0.8h |
| 222 | 1.2.7.4 | Complete Progress Report 3 | milestone | 0d | 2015-07-07 12:00 | 2015-07-07 12:00 | 221 | 0d |  |  | NamNT |  |
| 223 | 1.2.8 | **Report no.3** |  | 2.6d | 2015-07-06 15:24 | 2015-07-09 11:12 |  | 0d |  |  |  | 20h |
| 224 | 1.2.8.1 | Develop Report no.3 (draft version) |  | 0.2d | 2015-07-06 15:24 | 2015-07-06 17:00 | 196, 207, 212, 217 | 0d |  |  | NamNT | 1.6h |
| 225 | 1.2.8.2 | Review Report no.3 (draft version) |  | 1d | 2015-07-07 08:00 | 2015-07-08 08:48 | 224 | 0d |  |  | AnhTT | 8h |
| 226 | 1.2.8.3 | Update Report no.3 (draft version) |  | 0.5d | 2015-07-08 08:48 | 2015-07-08 13:48 | 225 | 0d |  |  | NamNT | 4h |
| 227 | 1.2.8.4 | Submit Report no.3 (first version) | milestone | 0d | 2015-07-08 13:48 | 2015-07-08 13:48 | 226 | 0d |  |  | NamNT |  |
| 228 | 1.2.8.5 | Revise after got comments for Report no.3 |  | 0.8d | 2015-07-08 13:48 | 2015-07-09 11:12 | 227 | 0d |  |  | NamNT | 6.4h |
| 229 | 1.2.8.6 | Submit Report no.3 (final version) | milestone | 0d | 2015-07-09 11:12 | 2015-07-09 11:12 | 228 | 0d |  |  | NamNT |  |
| 230 | 1.3 | **Construction** |  | 30d | 2015-07-09 11:12 | 2015-08-20 11:12 |  | 1.7d |  |  |  | 470.4h |
| 231 | 1.3.1 | **Code Review checklist** |  | 2.3d | 2015-07-15 11:12 | 2015-07-17 14:36 |  | 10.6d |  |  |  | 18.4h |
| 232 | 1.3.1.1 | Develop review checklist |  | 1.2d | 2015-07-15 11:12 | 2015-07-16 13:48 | 229 | 10.6d | 0d | finish no earlier than 2015-07-10 17:00 | MaiTTT | 9.6h |
| 233 | 1.3.1.2 | Review review checklist |  | 0.6d | 2015-07-16 13:48 | 2015-07-17 09:36 | 232 | 10.6d | 0d |  | AnhTT | 4.8h |
| 234 | 1.3.1.3 | Update review checklist |  | 0.5d | 2015-07-17 09:36 | 2015-07-17 14:36 | 233 | 10.6d | 0d |  | MaiTTT | 4h |
| 235 | 1.3.1.4 | Complete review checklist | milestone | 0d | 2015-07-17 14:36 | 2015-07-17 14:36 | 234 | 10.6d |  |  | MaiTTT |  |
| 236 | 1.3.2 | **Coding & Unit testing (continue)** |  | 24d | 2015-07-09 11:12 | 2015-08-12 11:12 |  | 1.7d |  |  |  | 197.6h |
| 237 | 1.3.2.1 | **Bus Rider Module** |  | 24d | 2015-07-09 11:12 | 2015-08-12 11:12 |  | 1.7d |  |  |  | 157.6h |
| 238 | 1.3.2.1.1 | **Common module** |  | 1d | 2015-07-21 16:12 | 2015-07-22 16:12 |  | 3.1d |  |  |  | 8h |
| 239 | 1.3.2.1.1.1 | Change app setting |  | 1d | 2015-07-21 16:12 | 2015-07-22 16:12 | 229 | 3.1d | 0d | finish no earlier than 2015-07-08 17:00 | NamNT | 8h |

| ID | WBS | Task | Duration | Start | Finish | Predecessors | Total slack | Free slack | Resources | Work |
| --- | --- | --- | --- | --- | --- | --- | --- | --- | --- | --- |
| 240 | 1.3.2.1.2 | **Account Management module** | 3.4d | 2015-07-14 09:36 | 2015-07-17 13:48 |  | 8.2d |  |  | 20h |
| 241 | 1.3.2.1.2.1 | Log in | 0.6d | 2015-07-14 09:36 | 2015-07-14 15:24 | 229 | 8.2d | 0d | NamNT | 4.8h |
| 242 | 1.3.2.1.2.2 | Sign up | 0.8d | 2015-07-14 15:24 | 2015-07-15 13:48 | 241 | 35.4d |  | Nam' | 6.4h |
| 243 | 1.3.2.1.2.3 | Log out | 0.3d | 2015-07-16 13:00 | 2015-07-16 15:24 | 241 | 6.7d | 0d | NamNT | 2.4h |
| 244 | 1.3.2.1.2.4 | Change password | 0.4d | 2015-07-16 15:24 | 2015-07-17 09:36 | 243 | 6.7d | 0d | NamNT | 3.2h |
| 245 | 1.3.2.1.2.5 | Forgot password | 0.4d | 2015-07-17 09:36 | 2015-07-17 13:48 | 244 | 6.7d | 0.4d | NamNT | 3.2h |
| 246 | 1.3.2.1.3 | **Bus module** | 8.5d | 2015-07-09 11:12 | 2015-07-21 16:12 |  | 1.7d |  |  | 34.4h |
| 247 | 1.3.2.1.3.1 | View bus list | 0.5d | 2015-07-09 11:12 | 2015-07-09 16:12 | 229 | 1.7d | 0d | MaiTTT | 4h |
| 248 | 1.3.2.1.3.2 | View bus info | 0.5d | 2015-07-09 16:12 | 2015-07-10 11:12 | 247 | 1.7d | 0d | MaiTTT | 4h |
| 249 | 1.3.2.1.3.3 | View bus route | 0.5d | 2015-07-10 11:12 | 2015-07-10 16:12 | 248 | 1.7d | 0d | MaiTTT | 4h |
| 250 | 1.3.2.1.3.4 | View nearest bus | 0.7d | 2015-07-10 16:12 | 2015-07-13 13:48 | 249 | 1.7d | 0d | NamNT | 5.6h |
| 251 | 1.3.2.1.3.5 | View bus map | 0.9d | 2015-07-15 13:48 | 2015-07-16 12:00 | 250 | 1.7d | 0d | NamNT | 7.2h |
| 252 | 1.3.2.1.3.6 | View bus near me | 1.2d | 2015-07-20 14:36 | 2015-07-21 16:12 | 251 | 3.7d | 0d | NamNT | 9.6h |
| 253 | 1.3.2.1.4 | **Path Finder module** | 7.2d | 2015-07-09 11:12 | 2015-07-20 13:48 |  | 4.5d |  |  | 31.2h |
| 254 | 1.3.2.1.4.1 | Find path | 1.5d | 2015-07-09 11:12 | 2015-07-10 16:12 | 229 | 4.67d | 0d | NamNT | 12h |
| 255 | 1.3.2.1.4.2 | View paths found | 0.6d | 2015-07-13 13:48 | 2015-07-14 09:36 | 254 | 4.8d | 0d | NamNT | 4.8h |
| 256 | 1.3.2.1.4.3 | View path detail | 0.8d | 2015-07-14 15:24 | 2015-07-15 13:48 | 255 | 4.5d | 0d | NamNT | 6.4h |
| 257 | 1.3.2.1.4.4 | View direction | 1d | 2015-07-17 13:48 | 2015-07-20 13:48 | 256 | 4.5d | 0d | NamNT | 8h |
| 258 | 1.3.2.1.5 | **Reminder module** | 3.5d | 2015-07-09 16:12 | 2015-07-15 11:12 |  | 9.1d |  |  | 20.8h |
| 259 | 1.3.2.1.5.1 | View bus reminder | 1d | 2015-07-09 16:12 | 2015-07-13 15:24 | 229 | 9.1d | 0d | MaiTTT | 8h |
| 260 | 1.3.2.1.5.2 | Add reminder | 0.4d | 2015-07-13 15:24 | 2015-07-14 09:36 | 259 | 9.1d | 0d | MaiTTT | 3.2h |
| 261 | 1.3.2.1.5.3 | Edit reminder | 0.6d | 2015-07-14 09:36 | 2015-07-14 15:24 | 260 | 9.1d | 0d | MaiTTT | 4.8h |
| 262 | 1.3.2.1.5.4 | Delete reminder | 0.2d | 2015-07-14 15:24 | 2015-07-14 17:00 | 261 | 9.1d | 0d | MaiTTT | 1.6h |
| 263 | 1.3.2.1.5.5 | Suspend/Unsuspend a chosen reminder | 0.4d | 2015-07-15 08:00 | 2015-07-15 11:12 | 262 | 9.1d | 0d | MaiTTT | 3.2h |

| ID | WBS | Task | Type | Duration | Start | Finish | Predecessors | Total slack | Free slack | Constraint | Resources | Work |
| --- | --- | --- | --- | --- | --- | --- | --- | --- | --- | --- | --- | --- |
| 264 | 1.3.2.1.6 | **Track module** |  | 7.4d | 2015-07-22 16:12 | 2015-08-03 10:24 |  | 0d |  |  |  | 10.4h |
| 265 | 1.3.2.1.6.1 | Tracking |  | 1d | 2015-07-22 16:12 | 2015-07-23 16:12 | 229 | 6.1d |  |  | NamNT | 8h |
| 266 | 1.3.2.1.6.2 | Cancel track |  | 0.3d | 2015-08-03 08:00 | 2015-08-03 10:24 | 265 | 0d |  | start no earlier than 2015-08-03 08:00 | NamNT | 2.4h |
| 267 | 1.3.2.1.7 | **Favorite module** |  | 7.1d | 2015-08-03 10:24 | 2015-08-12 11:12 |  | 15.1d |  |  |  | 32.8h |
| 268 | 1.3.2.1.7.1 | View favorite places |  | 0.5d | 2015-08-03 10:24 | 2015-08-03 15:24 | 266 | 15.1d | 0d |  | MaiTTT | 4h |
| 269 | 1.3.2.1.7.2 | Add favorite places |  | 0.5d | 2015-08-03 15:24 | 2015-08-05 09:36 | 268 | 15.1d | 0d |  | MaiTTT | 4h |
| 270 | 1.3.2.1.7.3 | Edit favorite places |  | 0.7d | 2015-08-05 09:36 | 2015-08-06 11:12 | 269 | 15.1d | 0d |  | MaiTTT | 5.6h |
| 271 | 1.3.2.1.7.4 | Delete favorite places |  | 0.3d | 2015-08-06 11:12 | 2015-08-06 14:36 | 270 | 15.1d | 0d |  | MaiTTT | 2.4h |
| 272 | 1.3.2.1.7.5 | Search favorite places |  | 0.4d | 2015-08-06 14:36 | 2015-08-07 08:48 | 271 | 15.1d | 0d |  | MaiTTT | 3.2h |
| 273 | 1.3.2.1.7.6 | View favorite buses |  | 0.5d | 2015-08-07 08:48 | 2015-08-07 13:48 | 272 | 15.1d | 0d |  | MaiTTT | 4h |
| 274 | 1.3.2.1.7.7 | Add favorite buses |  | 0.5d | 2015-08-07 13:48 | 2015-08-11 14:36 | 273 | 15.1d | 0d |  | MaiTTT | 4h |
| 275 | 1.3.2.1.7.8 | Delete favorite buses |  | 0.3d | 2015-08-11 14:36 | 2015-08-11 17:00 | 274 | 15.1d | 0d |  | MaiTTT | 2.4h |
| 276 | 1.3.2.1.7.9 | Search favorite buses |  | 0.4d | 2015-08-12 08:00 | 2015-08-12 11:12 | 275 | 15.1d | 0d |  | MaiTTT | 3.2h |
| 277 | 1.3.2.2 | Web service |  | 5d | 2015-07-23 16:12 | 2015-07-30 16:12 | 229 | 1.4d |  |  | NamNT | 40h |
| 278 | 1.3.2.3 | Complete coding | milestone | 0d | 2015-08-03 10:24 | 2015-08-03 10:24 | 277, 178, 239, 245, 257, 263, 266 | 0d |  | start no earlier than 2015-07-29 08:00 | NamNT; MaiTTT |  |
| 279 | 1.3.3 | **Progress report 4** |  | 0.5d | 2015-08-03 10:24 | 2015-08-03 15:24 |  | 0d |  |  |  | 4h |
| 280 | 1.3.3.1 | Develop Progress Report 4 |  | 0.3d | 2015-08-03 10:24 | 2015-08-03 13:48 | 235, 278 | 0d |  |  | NamNT | 2.4h |
| 281 | 1.3.3.2 | Review Progress Report 4 |  | 0.1d | 2015-08-03 13:48 | 2015-08-03 14:36 | 280 | 0d |  |  | MaiTTT | 0.8h |
| 282 | 1.3.3.3 | Update Progress Report 4 |  | 0.1d | 2015-08-03 14:36 | 2015-08-03 15:24 | 281 | 0d |  |  | NamNT | 0.8h |
| 283 | 1.3.3.4 | Complete Progress Report 4 | milestone | 0d | 2015-08-03 15:24 | 2015-08-03 15:24 | 282 | 0d |  |  | NamNT |  |
| 284 | 1.3.4 | **Report no.4** |  | 4d | 2015-08-03 13:48 | 2015-08-07 13:48 |  | 0d |  |  |  | 32h |
| 285 | 1.3.4.1 | Develop Report no.4 (draft version) |  | 1d | 2015-08-03 13:48 | 2015-08-04 13:48 | 235, 278, 280 | 0d |  |  | PhuongBB | 8h |
| 286 | 1.3.4.2 | Review Report no.4 (draft version) |  | 1d | 2015-08-04 13:48 | 2015-08-05 13:48 | 285 | 0d |  |  | AnhTT | 8h |
| 287 | 1.3.4.3 | Update Report no.4 (draft version) |  | 1d | 2015-08-05 13:48 | 2015-08-06 13:48 | 286 | 0d |  |  | PhuongBB; AnhTT | 8h |
| 288 | 1.3.4.4 | Submit Report no.4 (first version) | milestone | 0d | 2015-08-06 13:48 | 2015-08-06 13:48 | 287 | 0d |  |  | NamNT |  |
| 289 | 1.3.4.5 | Revise after got comments for Report no.4 |  | 1d | 2015-08-06 13:48 | 2015-08-07 13:48 | 288 | 0d |  |  | AnhTT; PhuongBB | 8h |
| 290 | 1.3.4.6 | Submit Report no.4 (final version) | milestone | 0d | 2015-08-07 13:48 | 2015-08-07 13:48 | 289 | 0d |  |  | NamNT |  |

| ID | WBS | Task | Type | Duration | Start | Finish | Predecessors | Total slack | Free slack | Constraint | Resources | Work |
| --- | --- | --- | --- | --- | --- | --- | --- | --- | --- | --- | --- | --- |
| 291 | 1.3.5 | **Testing** |  | 24.3d | 2015-07-15 11:12 | 2015-08-18 14:36 |  | 8.9d |  |  |  | 204.8h |
| 292 | 1.3.5.1 | **Execute test & fix bugs** |  | 23.1d | 2015-07-15 11:12 | 2015-08-17 12:00 |  | 8.9d |  |  |  | 195.2h |
| 293 | 1.3.5.1.1 | **Round 1** |  | 20.5d | 2015-07-15 11:12 | 2015-08-12 16:12 |  | 8.9d |  |  |  | 107.2h |
| 294 | 1.3.5.1.1.1 | **Execute unit test** |  | 20.5d | 2015-07-15 11:12 | 2015-08-12 16:12 |  | 8.9d |  |  |  | 50.4h |
| 295 | 1.3.5.1.1.1.1 | Bus driver module |  | 0.8d | 2015-07-21 08:00 | 2015-07-21 15:24 | 178, 207, 229 | 5.5d | 2.2d |  | AnhTT | 6.4h |
| 296 | 1.3.5.1.1.1.2 | Common module |  | 0.4d | 2015-07-23 13:48 | 2015-07-23 17:00 | 207, 239 | 3.3d | 0d | start no earlier than 2015-07-16 08:00 | AnhTT | 3.2h |
| 297 | 1.3.5.1.1.1.3 | Account Management module |  | 1d | 2015-07-20 08:00 | 2015-07-20 17:00 | 207, 245 | 6.3d | 3d | start no earlier than 2015-07-20 08:00 | AnhTT | 8h |
| 298 | 1.3.5.1.1.1.4 | Bus module |  | 0.8d | 2015-07-22 15:24 | 2015-07-23 13:48 | 207, 252 | 3.7d | 0.4d | start no earlier than 2015-07-21 08:00 | AnhTT | 6.4h |
| 299 | 1.3.5.1.1.1.5 | Path Finder module |  | 1d | 2015-07-21 15:24 | 2015-07-22 15:24 | 207, 257 | 4.5d | 1.2d | start no earlier than 2015-07-20 08:00 | AnhTT | 8h |
| 300 | 1.3.5.1.1.1.6 | Reminder module |  | 0.8d | 2015-07-15 11:12 | 2015-07-16 09:36 | 207, 263 | 9.1d | 5.8d | start no earlier than 2015-07-15 08:00 | AnhTT | 6.4h |
| 301 | 1.3.5.1.1.1.7 | Track module |  | 1d | 2015-08-03 10:24 | 2015-08-04 10:24 | 207, 266 | 21.7d |  | start no earlier than 2015-07-31 08:00 | AnhTT | 8h |
| 302 | 1.3.5.1.1.1.8 | Favorite module |  | 0.5d | 2015-08-12 11:12 | 2015-08-12 16:12 | 207, 276 | 15.1d |  | start no earlier than 2015-08-05 08:00 | AnhTT | 4h |
| 303 | 1.3.5.1.1.2 | Fix bugs unit test |  | 3d | 2015-07-23 17:00 | 2015-07-28 17:00 | 295, 296, 297, 298, 299, 300 | 3.3d |  |  | NamNT; MaiTTT | 24h |
| 304 | 1.3.5.1.1.3 | Execute integration test |  | 0.6d | 2015-08-03 10:24 | 2015-08-03 16:12 | 303, 278 | 0d |  |  | PhuongBB | 4.8h |
| 305 | 1.3.5.1.1.4 | Fix bugs integration test |  | 1d | 2015-08-03 16:12 | 2015-08-04 16:12 | 304 | 0d |  |  | NamNT; MaiTTT | 16h |
| 306 | 1.3.5.1.1.5 | Execute system test |  | 0.5d | 2015-08-04 16:12 | 2015-08-05 11:12 | 305 | 0d |  |  | PhuongBB | 4h |
| 307 | 1.3.5.1.1.6 | Fix bugs system test |  | 0.5d | 2015-08-05 11:12 | 2015-08-05 16:12 | 306 | 0d |  |  | NamNT; MaiTTT | 8h |
| 308 | 1.3.5.1.2 | **Round 2** |  | 6.6d | 2015-08-05 16:12 | 2015-08-14 12:00 |  | 1.9d |  |  |  | 80h |
| 309 | 1.3.5.1.2.1 | **Execute unit test** |  | 3.5d | 2015-08-05 16:12 | 2015-08-11 11:12 |  | 1.9d |  |  |  | 28h |
| 310 | 1.3.5.1.2.1.1 | Bus driver module |  | 0.5d | 2015-08-06 14:36 | 2015-08-07 09:36 | 307 | 1.4d |  |  | AnhTT | 4h |
| 311 | 1.3.5.1.2.1.2 | Common module |  | 0.3d | 2015-08-10 08:48 | 2015-08-10 11:12 | 307 | 0.2d |  |  | AnhTT | 2.4h |
| 312 | 1.3.5.1.2.1.3 | Account Management module |  | 0.2d | 2015-08-10 11:12 | 2015-08-10 13:48 | 307 | 0d |  |  | AnhTT | 1.6h |
| 313 | 1.3.5.1.2.1.4 | Bus module |  | 0.5d | 2015-08-07 09:36 | 2015-08-07 14:36 | 307 | 0.9d |  |  | AnhTT | 4h |
| 314 | 1.3.5.1.2.1.5 | Path Finder module |  | 0.8d | 2015-08-05 16:12 | 2015-08-06 14:36 | 307 | 1.9d |  |  | AnhTT | 6.4h |
| 315 | 1.3.5.1.2.1.6 | Reminder module |  | 0.3d | 2015-08-11 08:48 | 2015-08-11 11:12 | 307 | 16.6d |  |  | AnhTT | 2.4h |
| 316 | 1.3.5.1.2.1.7 | Track module |  | 0.5d | 2015-08-10 13:48 | 2015-08-11 08:48 | 307 | 16.9d |  |  | AnhTT | 4h |
| 317 | 1.3.5.1.2.1.8 | Favorite module |  | 0.4d | 2015-08-07 14:36 | 2015-08-10 08:48 | 307 | 0.5d |  |  | AnhTT | 3.2h |
| 318 | 1.3.5.1.2.2 | Fix bugs unit test |  | 1d | 2015-08-10 13:48 | 2015-08-11 13:48 | 310, 311, 312, 313, 314, 317 | 0d |  |  | NamNT; MaiTTT | 16h |
| 319 | 1.3.5.1.2.3 | Execute integration test |  | 0.8d | 2015-08-11 13:48 | 2015-08-12 11:12 | 318 | 0d |  |  | PhuongBB | 6.4h |
| 320 | 1.3.5.1.2.4 | Fix bugs integration test |  | 1d | 2015-08-12 11:12 | 2015-08-13 11:12 | 319 | 0d |  |  | NamNT; MaiTTT | 16h |
| 321 | 1.3.5.1.2.5 | Execute system test |  | 0.5d | 2015-08-13 11:12 | 2015-08-13 16:12 | 320 | 0d |  |  | PhuongBB | 4h |
| 322 | 1.3.5.1.2.6 | Fix bugs system test |  | 0.6d | 2015-08-13 16:12 | 2015-08-14 12:00 | 321 | 0d |  |  | NamNT; MaiTTT | 9.6h |
| 323 | 1.3.5.1.3 | Execute acceptance test & collect data |  | 1d | 2015-08-14 13:00 | 2015-08-17 12:00 | 322 | 0d |  |  | PhuongBB | 8h |
| 324 | 1.3.5.2 | Complete execute test | milestone | 0d | 2015-08-17 12:00 | 2015-08-17 12:00 | 323 | 0d |  |  | NamNT |  |

| ID | WBS | Task | Type | Duration | Start | Finish | Predecessors | Total slack | Resources | Work |
| --- | --- | --- | --- | --- | --- | --- | --- | --- | --- | --- |
| 325 | 1.3.5.3 | **Test Report** |  | 1.2d | 2015-08-17 13:00 | 2015-08-18 14:36 |  | 0d |  | 9.6h |
| 326 | 1.3.5.3.1 | Develop test report |  | 0.4d | 2015-08-17 13:00 | 2015-08-17 16:12 | 324 | 0d | PhuongBB | 3.2h |
| 327 | 1.3.5.3.2 | Review test report |  | 0.4d | 2015-08-17 16:12 | 2015-08-18 10:24 | 326 | 0d | NamNT | 3.2h |
| 328 | 1.3.5.3.3 | Update test report |  | 0.4d | 2015-08-18 10:24 | 2015-08-18 14:36 | 327 | 0d | PhuongBB | 3.2h |
| 329 | 1.3.5.3.4 | Complete test report | milestone | 0d | 2015-08-18 14:36 | 2015-08-18 14:36 | 328 | 0d | PhuongBB |  |
| 330 | 1.3.6 | **Quality report** |  | 0.7d | 2015-08-18 14:36 | 2015-08-19 11:12 |  | 0d |  | 5.6h |
| 331 | 1.3.6.1 | Develop quality report |  | 0.3d | 2015-08-18 14:36 | 2015-08-18 17:00 | 329 | 0d | NamNT | 2.4h |
| 332 | 1.3.6.2 | Review quality report |  | 0.2d | 2015-08-19 08:00 | 2015-08-19 09:36 | 331 | 0d | PhuongBB | 1.6h |
| 333 | 1.3.6.3 | Update quality report |  | 0.2d | 2015-08-19 09:36 | 2015-08-19 11:12 | 332 | 0d | NamNT | 1.6h |
| 334 | 1.3.6.4 | Complete quality report | milestone | 0d | 2015-08-19 11:12 | 2015-08-19 11:12 | 333 | 0d | NamNT |  |
| 335 | 1.3.7 | **Progress report 5** |  | 0.5d | 2015-08-19 11:12 | 2015-08-19 16:12 |  | 0d |  | 4h |
| 336 | 1.3.7.1 | Develop Progress Report 5 |  | 0.3d | 2015-08-19 11:12 | 2015-08-19 14:36 | 334, 277 | 0d | NamNT | 2.4h |
| 337 | 1.3.7.2 | Review Progress Report 5 |  | 0.1d | 2015-08-19 14:36 | 2015-08-19 15:24 | 336 | 0d | NamNT | 0.8h |
| 338 | 1.3.7.3 | Update Progress Report 5 |  | 0.1d | 2015-08-19 15:24 | 2015-08-19 16:12 | 337 | 0d | NamNT | 0.8h |
| 339 | 1.3.7.4 | Complete Progress Report 5 | milestone | 0d | 2015-08-19 16:12 | 2015-08-19 16:12 | 338 | 0d | NamNT |  |
| 340 | 1.3.8 | **Report no.5** |  | 0.5d | 2015-08-19 16:12 | 2015-08-20 11:12 |  | 0d |  | 4h |
| 341 | 1.3.8.1 | Develop Report no.5 (draft version) |  | 0.1d | 2015-08-19 16:12 | 2015-08-19 17:00 | 329, 334, 339 | 0d | NamNT | 0.8h |
| 342 | 1.3.8.2 | Review Report no.5 (draft version) |  | 0.2d | 2015-08-20 08:00 | 2015-08-20 09:36 | 341 | 0d | NamNT | 1.6h |
| 343 | 1.3.8.3 | Update Report no.5 (draft version) |  | 0.1d | 2015-08-20 09:36 | 2015-08-20 10:24 | 342 | 0d | PhuongBB | 0.8h |
| 344 | 1.3.8.4 | Submit Report no.5 (first version) | milestone | 0d | 2015-08-20 10:24 | 2015-08-20 10:24 | 343 | 0d | NamNT |  |
| 345 | 1.3.8.5 | Revise after got comments for Report no.5 |  | 0.1d | 2015-08-20 10:24 | 2015-08-20 11:12 | 344 | 0d | PhuongBB | 0.8h |
| 346 | 1.3.8.6 | Submit Report no.5 (final version) | milestone | 0d | 2015-08-20 11:12 | 2015-08-20 11:12 | 345 | 0d | NamNT |  |
| 347 | 1.4 | **Termination** |  | 9.6d | 2015-08-20 11:12 | 2015-09-02 17:00 |  | 0d |  | 112.8h |
| 348 | 1.4.1 | **Report no.6** |  | 8.1d | 2015-08-20 11:12 | 2015-09-01 12:00 |  | 0d |  | 64.8h |
| 349 | 1.4.1.1 | Complete source code & final report |  | 2.5d | 2015-08-20 11:12 | 2015-08-24 16:12 | 346 | 0d | MaiTTT | 20h |
| 350 | 1.4.1.2 | Develop installation guide |  | 0.5d | 2015-08-24 16:12 | 2015-08-25 11:12 | 349 | 0d | AnhTT | 4h |
| 351 | 1.4.1.3 | Develop user guideline |  | 0.8d | 2015-08-25 11:12 | 2015-08-26 09:36 | 350 | 0d | AnhTT | 6.4h |
| 352 | 1.4.1.4 | Complete Project Result Assessment |  | 1d | 2015-08-26 09:36 | 2015-08-27 09:36 | 351 | 0d | PhuongBB | 8h |
| 353 | 1.4.1.5 | Conduct lessons learned |  | 0.6d | 2015-08-27 09:36 | 2015-08-27 15:24 | 352 | 0d | PhuongBB | 4.8h |
| 354 | 1.4.1.6 | Complete Presentation slide |  | 1d | 2015-08-27 15:24 | 2015-08-28 15:24 | 353 | 0d | NamNT | 8h |
| 355 | 1.4.1.7 | Review Report no.6 (draft version) |  | 1d | 2015-08-28 15:24 | 2015-08-31 15:24 | 354 | 0d | NamNT | 8h |
| 356 | 1.4.1.8 | Update Report no.6 (draft version) |  | 0.5d | 2015-08-31 15:24 | 2015-09-01 10:24 | 355 | 0d | NamNT | 4h |
| 357 | 1.4.1.9 | Submit Report no.6 (first version) | milestone | 0d | 2015-09-01 10:24 | 2015-09-01 10:24 | 356 | 0d | NamNT |  |
| 358 | 1.4.1.10 | Revise after got comments for Report no.6 |  | 0.2d | 2015-09-01 10:24 | 2015-09-01 12:00 | 357 | 0d | NamNT | 1.6h |
| 359 | 1.4.1.11 | Submit Report no.6 (final version) | milestone | 0d | 2015-09-01 12:00 | 2015-09-01 12:00 | 358 | 0d | NamNT |  |
| 360 | 1.4.1.12 | Submit Final report & CD source code | milestone | 0d | 2015-09-01 12:00 | 2015-09-01 12:00 | 359 | 0d | NamNT |  |

| ID | WBS | Task | Duration | Start | Finish | Predecessors | Total slack | Resources | Work |
| --- | --- | --- | --- | --- | --- | --- | --- | --- | --- |
| 361 | 1.4.2 | **Pre-closing** | 1d | 2015-09-01 13:00 | 2015-09-02 12:00 |  | 0d |  | 32h |
| 362 | 1.4.2.1 | Training presentation | 1d | 2015-09-01 13:00 | 2015-09-02 12:00 | 360 | 0d | NamNT; MaiTTT; AnhTT; PhuongBB | 32h |
| 363 | 1.4.3 | **Closing** | 0.5d | 2015-09-02 13:00 | 2015-09-02 17:00 |  | 0d |  | 16h |
| 364 | 1.4.3.1 | Present Capstone Project & Completed | 0.5d | 2015-09-02 13:00 | 2015-09-02 17:00 | 362 | 0d | NamNT; MaiTTT; AnhTT; PhuongBB | 16h |
