Schedule from MS Project, 2015-05-11 to 2015-06-10.

## Calendars

- Standard: Mon-Fri 08:00-12:00, 13:00-17:00; Sat-Sun off.

## Resources

| Resource |
| --- |
| NamNT |
| CuongNLT |
| MaiTTT |
| PhuongBB |
| AnhTT |
| SangNV |

## Schedule

| ID | WBS | Task | Type | Duration | Start | Finish | Predecessors | Total slack | Free slack | Resources | Work |
| --- | --- | --- | --- | --- | --- | --- | --- | --- | --- | --- | --- |
| 1 | 1 | **BL** |  | 1d | 2015-05-11 08:00 | 2015-05-11 17:00 |  |  |  |  | 658.4h |
| 2 | 1.1 | **Initiation** |  | 8.5d | 2015-05-11 08:00 | 2015-05-21 12:00 |  | -24.4d | 0d |  | 288.8h |
| 3 | 1.1.1 | System feasible study |  | 0.2d | 2015-05-11 08:00 | 2015-05-11 09:36 |  | -24.4d | 0d | AnhTT; CuongNLT; MaiTTT; NamNT; PhuongBB; SangNV | 9.6h |
| 4 | 1.1.2 | Define business situation |  | 0.3d | 2015-05-11 09:36 | 2015-05-11 12:00 | 3 | -24.4d | 0d | CuongNLT; NamNT; AnhTT; MaiTTT; PhuongBB | 12h |
| 5 | 1.1.3 | Develop project idea |  | 1d | 2015-05-11 13:00 | 2015-05-12 12:00 | 4 | -24.4d | 0d | CuongNLT; MaiTTT; NamNT; AnhTT; PhuongBB | 40h |
| 6 | 1.1.4 | Define project and system scope |  | 0.2d | 2015-05-12 13:00 | 2015-05-12 14:36 | 5 | -24.4d | 0d | CuongNLT; MaiTTT; NamNT; AnhTT; PhuongBB | 8h |
| 7 | 1.1.5 | Prepare project |  | 0.5d | 2015-05-12 14:36 | 2015-05-13 09:36 | 6 | -24.4d | 0d | AnhTT; CuongNLT; MaiTTT; NamNT; PhuongBB | 20h |
| 8 | 1.1.6 | Kick-off meeting | milestone | 0.2d | 2015-05-13 09:36 | 2015-05-13 11:12 | 7 | -24.4d | 0d | AnhTT; CuongNLT; MaiTTT; NamNT; PhuongBB; SangNV | 9.6h |
| 9 | 1.1.7 | Q & A Management |  | 0.5d | 2015-05-13 11:12 | 2015-05-13 16:12 | 8 | -23.5d | 0d | MaiTTT; NamNT | 8h |
| 10 | 1.1.8 | **Technologies** |  | 5d | 2015-05-13 16:12 | 2015-05-20 16:12 |  | -23.3d | 0d |  | 50.4h |
| 11 | 1.1.8.1 | Research development technologies |  | 1.2d | 2015-05-13 16:12 | 2015-05-15 08:48 | 9 | -23.3d | 0d | AnhTT; MaiTTT; CuongNLT | 18.4h |
| 12 | 1.1.8.2 | Install and configure Eclipse IDE and Android SDK |  | 0.5d | 2015-05-15 08:48 | 2015-05-15 13:48 | 11 | -23.3d | 0d | AnhTT | 4h |
| 13 | 1.1.8.3 | Training Java, Android SDK & Eclipse IDE |  | 2d | 2015-05-15 13:48 | 2015-05-20 16:12 | 12 | -23.3d | 0d | AnhTT | 16h |
| 14 | 1.1.8.4 | Install and configure Visual Studio, SQL Server |  | 0.5d | 2015-05-15 15:24 | 2015-05-18 10:24 | 11 | -22d | 0d | MaiTTT | 4h |
| 15 | 1.1.8.5 | Study web service using .NET & SQL Server |  | 1d | 2015-05-18 10:24 | 2015-05-19 13:48 | 14 | -22d | 0d | MaiTTT | 8h |
| 16 | 1.1.9 | **SRS/PP/Concept design Review checklist** |  | 3.7d | 2015-05-13 16:12 | 2015-05-19 13:48 |  | -23.2d | 0d |  | 16h |
| 17 | 1.1.9.1 | Develop review checklist |  | 1.5d | 2015-05-13 16:12 | 2015-05-18 11:12 | 9 | -23.2d | 0d | MaiTTT; PhuongBB | 12h |
| 18 | 1.1.9.2 | Review review checklist |  | 0.1d | 2015-05-18 11:12 | 2015-05-18 12:00 | 17 | -23.2d | 0d | MaiTTT; PhuongBB | 1.6h |
| 19 | 1.1.9.3 | Update review checklist |  | 0.3d | 2015-05-18 13:00 | 2015-05-19 13:48 | 18 | -23.2d | 0d | MaiTTT; PhuongBB | 2.4h |
| 20 | 1.1.9.4 | Complete review checklist | milestone | 0d | 2015-05-19 13:48 | 2015-05-19 13:48 | 19 | -23.2d | 0d | MaiTTT; PhuongBB |  |
| 21 | 1.1.10 | **Requirements** |  | 5.2d | 2015-05-13 16:12 | 2015-05-21 08:48 |  | -23.5d | 0d |  | 60h |
| 22 | 1.1.10.1 | **User Requirements Specification** |  | 4d | 2015-05-13 16:12 | 2015-05-19 16:12 |  | -23.5d | 0d |  | 55.2h |
| 23 | 1.1.10.1.1 | Collect business requirements and processes |  | 1d | 2015-05-13 16:12 | 2015-05-14 16:12 | 9 | -23.5d | 0d | CuongNLT; PhuongBB | 16h |
| 24 | 1.1.10.1.2 | Create draft requirements |  | 1d | 2015-05-14 16:12 | 2015-05-15 16:12 | 23 | -23.5d | 0d | CuongNLT; PhuongBB | 10.4h |
| 25 | 1.1.10.1.3 | Complete draft requirements | milestone | 0.5d | 2015-05-15 16:12 | 2015-05-18 11:12 | 24 | -23.5d | 0d | CuongNLT; PhuongBB; NamNT | 8h |
| 26 | 1.1.10.1.4 | Develop main function and processes |  | 1.3d | 2015-05-18 11:12 | 2015-05-19 16:12 | 25 | -23.5d | 0d | CuongNLT; MaiTTT; PhuongBB; AnhTT | 20.8h |
| 27 | 1.1.10.2 | Review User Requirement Specification with checklist |  | 0.2d | 2015-05-19 16:12 | 2015-05-20 08:48 | 26, 20 | -23.5d | 0d | NamNT; MaiTTT; PhuongBB | 2.4h |
| 28 | 1.1.10.3 | Update User Requirement Specification |  | 0.3d | 2015-05-20 08:48 | 2015-05-21 08:48 | 27 | -23.5d | 0d | CuongNLT; MaiTTT; PhuongBB; AnhTT; NamNT | 2.4h |
| 29 | 1.1.10.4 | Complete User Requirement Specification | milestone | 0d | 2015-05-21 08:48 | 2015-05-21 08:48 | 28 | -23.5d | 0d | NamNT |  |

| ID | WBS | Task | Type | Duration | Start | Finish | Predecessors | Total slack | Free slack | Resources | Work |
| --- | --- | --- | --- | --- | --- | --- | --- | --- | --- | --- | --- |
| 30 | 1.1.11 | **Concept design** |  | 2.2d | 2015-05-18 11:12 | 2015-05-20 13:48 |  | -23d | 0d |  | 16h |
| 31 | 1.1.11.1 | Create draft concept design |  | 1d | 2015-05-18 11:12 | 2015-05-19 11:12 | 25 | -22.8d | 0d | CuongNLT | 8h |
| 32 | 1.1.11.2 | Review concept design with checklist |  | 0.5d | 2015-05-19 13:48 | 2015-05-20 08:48 | 31, 20 | -23d | 0d | MaiTTT | 4h |
| 33 | 1.1.11.3 | Update concept design |  | 0.5d | 2015-05-20 08:48 | 2015-05-20 13:48 | 32 | -23d | 0d | CuongNLT | 4h |
| 34 | 1.1.11.4 | Complete concept design | milestone | 0d | 2015-05-20 13:48 | 2015-05-20 13:48 | 33 | -23d | 0d | CuongNLT |  |
| 35 | 1.1.12 | **Project plan** |  | 4.6d | 2015-05-13 16:12 | 2015-05-20 12:00 |  | -24.8d | 0d |  | 28h |
| 36 | 1.1.12.1 | Develop project definition |  | 0.5d | 2015-05-13 16:12 | 2015-05-14 11:12 | 8 | -24.8d | 0d | NamNT | 4h |
| 37 | 1.1.12.2 | Develop Work Breakdown Structure |  | 0.7d | 2015-05-14 11:12 | 2015-05-15 08:48 | 36 | -24.8d | 0d | NamNT | 5.6h |
| 38 | 1.1.12.3 | Create Project Schedule |  | 0.7d | 2015-05-15 08:48 | 2015-05-15 15:24 | 37 | -24.8d | 0d | NamNT | 5.6h |
| 39 | 1.1.12.4 | Create Configuration Management Plan version 1.0 |  | 0.3d | 2015-05-15 15:24 | 2015-05-18 13:48 | 38 | -22.9d | 0d | NamNT | 2.4h |
| 40 | 1.1.12.5 | Create Project Plan (first version) |  | 1d | 2015-05-18 13:48 | 2015-05-19 13:48 | 39 | -22.9d | 0d | NamNT | 8h |
| 41 | 1.1.12.6 | Review Project Plan (first version) |  | 0.3d | 2015-05-20 09:36 | 2015-05-20 12:00 | 40 | -22.9d | 0d | MaiTTT | 2.4h |
| 42 | 1.1.12.7 | Complete Project Plan (final version) | milestone | 0d | 2015-05-20 12:00 | 2015-05-20 12:00 | 41 | -22.9d | 0d | NamNT |  |
| 43 | 1.1.13 | **Progress Report 1** |  | 0.7d | 2015-05-19 13:48 | 2015-05-20 10:24 |  | -22.9d | 0d |  | 4h |
| 44 | 1.1.13.1 | Develop Progress Report 1 |  | 0.3d | 2015-05-19 13:48 | 2015-05-19 16:12 | 38 | -22.9d | 0d | NamNT | 2.4h |
| 45 | 1.1.13.2 | Review Progress Report 1 |  | 0.1d | 2015-05-20 08:48 | 2015-05-20 09:36 | 44 | -22.7d | 0d | MaiTTT | 0.8h |
| 46 | 1.1.13.3 | Update Progress Report 1 |  | 0.1d | 2015-05-20 09:36 | 2015-05-20 10:24 | 45 | -22.7d | 0d | NamNT | 0.8h |
| 47 | 1.1.13.4 | Complete Progress Report 1 | milestone | 0d | 2015-05-20 10:24 | 2015-05-20 10:24 | 46 | -22.7d | 0d | NamNT |  |
| 48 | 1.1.14 | Review Report no.1 (draft version) |  | 0.2d | 2015-05-21 08:48 | 2015-05-21 10:24 | 13, 15, 29, 34, 42, 47, 20 | -23.5d | 0d | CuongNLT; MaiTTT | 3.2h |
| 49 | 1.1.15 | Update Report no.1 (draft version) |  | 0.1d | 2015-05-21 10:24 | 2015-05-21 11:12 | 48 | -23.5d | 0d | CuongNLT; MaiTTT; NamNT | 2.4h |
| 50 | 1.1.16 | Submit Report no.1 (first version) | milestone | 0d | 2015-05-21 11:12 | 2015-05-21 11:12 | 49 | -23.5d | 0d | NamNT |  |
| 51 | 1.1.17 | Revise after got comments for Report no.1 |  | 0.1d | 2015-05-21 11:12 | 2015-05-21 12:00 | 50 | -23.5d | 0d | CuongNLT; NamNT | 1.6h |
| 52 | 1.1.18 | Submit Report no.1 (final version) | milestone | 0d | 2015-05-21 12:00 | 2015-05-21 12:00 | 51 | -23.5d | 0d | NamNT |  |
| 53 | 1.2 | **Solution** |  | 22.6d? | 2015-05-11 08:00 | 2015-06-10 13:48 |  | -21.6d | 0d |  | 369.6h |
| 54 | 1.2.1 | **Requirements** |  | 3.4d | 2015-05-21 13:00 | 2015-05-26 16:12 |  | -23.5d | 0d |  | 84.8h |
| 55 | 1.2.1.1 | **Software Requirements Specification** |  | 3.4d | 2015-05-21 13:00 | 2015-05-26 16:12 |  | -23.5d | 0d |  | 84.8h |
| 56 | 1.2.1.1.1 | **Functional Requirement Specification** |  | 1.7d | 2015-05-21 13:00 | 2015-05-25 09:36 |  | -23.5d | 0d |  | 27.2h |
| 57 | 1.2.1.1.1.1 | **Bus Driver Module** |  | 0.4d | 2015-05-21 13:00 | 2015-05-21 16:12 |  | -23.5d | 0d |  | 3.2h |
| 58 | 1.2.1.1.1.1.1 | Send bus info module |  | 0.4d | 2015-05-21 13:00 | 2015-05-21 16:12 | 52 | -23.5d | 0d | AnhTT | 3.2h |

| ID | WBS | Task | Duration | Start | Finish | Predecessors | Total slack | Free slack | Resources | Work |
| --- | --- | --- | --- | --- | --- | --- | --- | --- | --- | --- |
| 59 | 1.2.1.1.1.2 | **Bus Rider Module** | 1.3d | 2015-05-21 16:12 | 2015-05-25 09:36 |  | -23.5d | 0d |  | 24h |
| 60 | 1.2.1.1.1.2.1 | **Sync module** | 1.3d | 2015-05-21 16:12 | 2015-05-25 09:36 |  | -23.5d | 0d |  | 6.4h |
| 61 | 1.2.1.1.1.2.1.1 | PhoneNumberSync module | 0.3d | 2015-05-21 16:12 | 2015-05-22 09:36 | 58 | -23.5d | 0d | AnhTT | 2.4h |
| 62 | 1.2.1.1.1.2.1.2 | Connect Facebook module | 0.1d | 2015-05-22 09:36 | 2015-05-22 10:24 | 61 | -23.5d | 0d | AnhTT | 0.8h |
| 63 | 1.2.1.1.1.2.1.3 | Show Favorite place module | 0.1d | 2015-05-22 10:24 | 2015-05-22 11:12 | 62 | -23.5d | 0d | AnhTT | 0.8h |
| 64 | 1.2.1.1.1.2.1.4 | Show Favorite bus module | 0.1d | 2015-05-22 11:12 | 2015-05-22 12:00 | 63 | -23.5d | 0d | AnhTT | 0.8h |
| 65 | 1.2.1.1.1.2.1.5 | Add/remove Favorite place module | 0.1d | 2015-05-25 08:00 | 2015-05-25 08:48 | 64 | -21.4d | 0d | AnhTT | 0.8h |
| 66 | 1.2.1.1.1.2.1.6 | About module | 0.1d | 2015-05-25 08:48 | 2015-05-25 09:36 | 65 | -21.4d | 0d | AnhTT | 0.8h |
| 67 | 1.2.1.1.1.2.2 | **Bus module** | 0.5d | 2015-05-21 16:12 | 2015-05-22 11:12 |  | -20.6d | 0d |  | 8h |
| 68 | 1.2.1.1.1.2.2.1 | Bus list module | 0.1d | 2015-05-21 16:12 | 2015-05-21 17:00 | 58 | -8.4d | 0d | MaiTTT | 0.8h |
| 69 | 1.2.1.1.1.2.2.2 | Bus info module | 0.1d | 2015-05-22 08:00 | 2015-05-22 08:48 | 68 | -8.4d | 0d | MaiTTT | 0.8h |
| 70 | 1.2.1.1.1.2.2.3 | Bus route module | 0.1d | 2015-05-22 08:48 | 2015-05-22 09:36 | 69 | -8.4d | 0d | MaiTTT | 0.8h |
| 71 | 1.2.1.1.1.2.2.4 | Bus nearest module | 0.1d | 2015-05-22 09:36 | 2015-05-22 10:24 | 70 | -8.4d | 0d | MaiTTT | 0.8h |
| 72 | 1.2.1.1.1.2.2.5 | Bus map module | 0.1d | 2015-05-22 10:24 | 2015-05-22 11:12 | 71 | -8.4d | 0d | MaiTTT | 0.8h |
| 73 | 1.2.1.1.1.2.2.6 | Set/unset favorite bus module | 0.1d | 2015-05-21 16:12 | 2015-05-21 17:00 | 58 | -20.6d | 0d | CuongNLT | 0.8h |
| 74 | 1.2.1.1.1.2.2.7 | Remind module | 0.1d | 2015-05-22 08:00 | 2015-05-22 08:48 | 73 | -20.6d | 0d | CuongNLT | 0.8h |
| 75 | 1.2.1.1.1.2.2.8 | Track module | 0.1d | 2015-05-22 08:48 | 2015-05-22 09:36 | 74 | -20.6d | 0d | CuongNLT | 0.8h |
| 76 | 1.2.1.1.1.2.2.9 | Get notification module | 0.1d | 2015-05-22 09:36 | 2015-05-22 10:24 | 75 | -20.6d | 0d | CuongNLT | 0.8h |
| 77 | 1.2.1.1.1.2.2.10 | Swap direction module | 0.1d | 2015-05-22 10:24 | 2015-05-22 11:12 | 76 | -20.6d | 0d | CuongNLT | 0.8h |
| 78 | 1.2.1.1.1.2.3 | **Shigeki module** | 0.6d | 2015-05-21 16:12 | 2015-05-22 12:00 |  | -20.7d | 0d |  | 4.8h |
| 79 | 1.2.1.1.1.2.3.1 | Achievement module | 0.1d | 2015-05-21 16:12 | 2015-05-21 17:00 | 58 | -20.7d | 0d | NamNT | 0.8h |
| 80 | 1.2.1.1.1.2.3.2 | Collection module | 0.1d | 2015-05-22 08:00 | 2015-05-22 08:48 | 79 | -20.7d | 0d | NamNT | 0.8h |
| 81 | 1.2.1.1.1.2.3.3 | Mission module | 0.1d | 2015-05-22 08:48 | 2015-05-22 09:36 | 80 | -20.7d | 0d | NamNT | 0.8h |
| 82 | 1.2.1.1.1.2.3.4 | Statistic module | 0.1d | 2015-05-22 09:36 | 2015-05-22 10:24 | 81 | -20.7d | 0d | NamNT | 0.8h |
| 83 | 1.2.1.1.1.2.3.5 | Rank module | 0.1d | 2015-05-22 10:24 | 2015-05-22 11:12 | 82 | -20.7d | 0d | NamNT | 0.8h |
| 84 | 1.2.1.1.1.2.3.6 | Scan QR code module | 0.1d | 2015-05-22 11:12 | 2015-05-22 12:00 | 83 | -20.7d | 0d | NamNT | 0.8h |

| ID | WBS | Task | Type | Duration | Start | Finish | Predecessors | Total slack | Free slack | Resources | Work |
| --- | --- | --- | --- | --- | --- | --- | --- | --- | --- | --- | --- |
| 85 | 1.2.1.1.1.2.4 | **Search module** |  | 0.4d | 2015-05-21 16:12 | 2015-05-22 10:24 |  | -21.6d | 0d |  | 3.2h |
| 86 | 1.2.1.1.1.2.4.1 | Search bus module |  | 0.1d | 2015-05-21 16:12 | 2015-05-21 17:00 | 58 | -21.6d | 0d | PhuongBB | 0.8h |
| 87 | 1.2.1.1.1.2.4.2 | Search route module |  | 0.1d | 2015-05-22 08:00 | 2015-05-22 08:48 | 86 | -21.6d | 0d | PhuongBB | 0.8h |
| 88 | 1.2.1.1.1.2.4.3 | Search Favorite bus module |  | 0.1d | 2015-05-22 08:48 | 2015-05-22 09:36 | 87 | -21.6d | 0d | PhuongBB | 0.8h |
| 89 | 1.2.1.1.1.2.4.4 | Search Favorite place module |  | 0.1d | 2015-05-22 09:36 | 2015-05-22 10:24 | 88 | -21.6d | 0d | PhuongBB | 0.8h |
| 90 | 1.2.1.1.1.2.5 | Setting module |  | 0.2d | 2015-05-22 10:24 | 2015-05-22 12:00 | 89 | -21.6d | 0d | PhuongBB | 1.6h |
| 91 | 1.2.1.1.2 | **Non-functional Requirement Specification** |  | 0.9d | 2015-05-22 13:00 | 2015-05-25 11:12 |  | -21.6d | 0d |  | 21.6h |
| 92 | 1.2.1.1.2.1 | Develop User Interface Requirement |  | 0.5d | 2015-05-22 13:00 | 2015-05-22 17:00 | 90 | -21.6d | 0d | NamNT; CuongNLT; AnhTT | 12h |
| 93 | 1.2.1.1.2.2 | Develop Performance Requirement |  | 0.4d | 2015-05-25 08:00 | 2015-05-25 11:12 | 92 | -21.6d | 0d | CuongNLT; NamNT; AnhTT | 9.6h |
| 94 | 1.2.1.1.3 | Review Software Requirement Specification with checklist |  | 1d | 2015-05-25 11:12 | 2015-05-26 11:12 | 66, 77, 84, 89, 90, 93 | -21.6d | 0d | MaiTTT; PhuongBB | 16h |
| 95 | 1.2.1.1.4 | Update Software Requirement Specification |  | 0.5d | 2015-05-26 11:12 | 2015-05-26 16:12 | 94 | -21.6d | 0d | NamNT; CuongNLT; MaiTTT; PhuongBB; AnhTT | 20h |
| 96 | 1.2.1.1.5 | Complete Software Requirement Specification | milestone | 0d | 2015-05-26 16:12 | 2015-05-26 16:12 | 95 | -21.6d | 0d | NamNT |  |
| 97 | 1.2.2 | **Design** |  | 10.2d | 2015-05-26 16:12 | 2015-06-10 08:48 |  | -21.6d | 0d |  | 191.2h |
| 98 | 1.2.2.1 | **Design Review checklist** |  | 2.4d | 2015-05-26 16:12 | 2015-05-29 10:24 |  | -21.6d | 0d |  | 28.8h |
| 99 | 1.2.2.1.1 | Develop review checklist |  | 2.1d | 2015-05-26 16:12 | 2015-05-28 17:00 | 96 | -21.6d | 0d | MaiTTT; PhuongBB | 24h |
| 100 | 1.2.2.1.2 | Review review checklist |  | 0.1d | 2015-05-29 08:00 | 2015-05-29 08:48 | 99 | -21.6d | 0d | MaiTTT; PhuongBB | 1.6h |
| 101 | 1.2.2.1.3 | Update review checklist |  | 0.2d | 2015-05-29 08:48 | 2015-05-29 10:24 | 100 | -21.6d | 0d | MaiTTT; PhuongBB | 3.2h |
| 102 | 1.2.2.1.4 | Complete review checklist | milestone | 0d | 2015-05-29 10:24 | 2015-05-29 10:24 | 101 | -21.6d | 0d | MaiTTT; PhuongBB |  |
| 103 | 1.2.2.2 | **Architecture design** |  | 3d | 2015-05-26 16:12 | 2015-05-29 16:12 |  | -21.6d | 0d |  | 48h |
| 104 | 1.2.2.2.1 | Define system structure and collect system features |  | 1d | 2015-05-26 16:12 | 2015-05-27 16:12 | 96 | -20.7d | 0d | AnhTT; NamNT; CuongNLT | 24h |
| 105 | 1.2.2.2.2 | Study & choose System Architecture |  | 0.5d | 2015-05-27 16:12 | 2015-05-28 11:12 | 104 | -20.7d | 0d | AnhTT; NamNT; CuongNLT | 12h |
| 106 | 1.2.2.2.3 | Review Architecture Design with checklist |  | 0.3d | 2015-05-29 10:24 | 2015-05-29 13:48 | 102, 105 | -21.6d | 0d | MaiTTT; PhuongBB | 4.8h |
| 107 | 1.2.2.2.4 | Update Architecture Design |  | 0.3d | 2015-05-29 13:48 | 2015-05-29 16:12 | 106 | -21.6d | 0d | AnhTT; NamNT; CuongNLT | 7.2h |
| 108 | 1.2.2.2.5 | Complete System Architecture version 1.0 | milestone | 0d | 2015-05-29 16:12 | 2015-05-29 16:12 | 107 | -21.6d | 0d | AnhTT; NamNT; CuongNLT |  |

| ID | WBS | Task | Duration | Start | Finish | Predecessors | Total slack | Free slack | Resources | Work |
| --- | --- | --- | --- | --- | --- | --- | --- | --- | --- | --- |
| 109 | 1.2.2.3 | **Detailed design** | 7.2d | 2015-05-29 16:12 | 2015-06-10 08:48 |  | -21.1d | 0d |  | 77.6h |
| 110 | 1.2.2.3.1 | **User Interface design** | 4.4d | 2015-05-29 16:12 | 2015-06-05 10:24 |  | -21.1d | 0d |  | 48h |
| 111 | 1.2.2.3.1.1 | **Bus Driver Module** | 1.3d | 2015-05-29 16:12 | 2015-06-02 09:36 |  | -21.1d | 0d |  | 3.2h |
| 112 | 1.2.2.3.1.1.1 | Send bus info module | 0.4d | 2015-05-29 16:12 | 2015-06-02 09:36 | 108 | -21.1d | 0d | AnhTT | 3.2h |
| 113 | 1.2.2.3.1.2 | **Bus Rider Module** | 4.4d | 2015-05-29 16:12 | 2015-06-05 10:24 |  | -19.8d | 0d |  | 44.8h |
| 114 | 1.2.2.3.1.2.1 | **Sync module** | 3.1d | 2015-06-02 09:36 | 2015-06-05 10:24 |  | -21.1d | 0d |  | 6.4h |
| 115 | 1.2.2.3.1.2.1.1 | PhoneNumberSync module | 0.3d | 2015-06-02 09:36 | 2015-06-04 15:24 | 112 | -21.1d | 0d | AnhTT | 2.4h |
| 116 | 1.2.2.3.1.2.1.2 | Connect Facebook module | 0.1d | 2015-06-04 15:24 | 2015-06-04 16:12 | 115 | -21.1d | 0d | AnhTT | 0.8h |
| 117 | 1.2.2.3.1.2.1.3 | Show Favorite place module | 0.1d | 2015-06-04 16:12 | 2015-06-04 17:00 | 116 | -21.1d | 0d | AnhTT | 0.8h |
| 118 | 1.2.2.3.1.2.1.4 | Show Favorite bus module | 0.1d | 2015-06-05 08:00 | 2015-06-05 08:48 | 117 | -21.1d | 0d | AnhTT | 0.8h |
| 119 | 1.2.2.3.1.2.1.5 | Add/remove Favorite place module | 0.1d | 2015-06-05 08:48 | 2015-06-05 09:36 | 118 | -21.1d | 0d | AnhTT | 0.8h |
| 120 | 1.2.2.3.1.2.1.6 | About module | 0.1d | 2015-06-05 09:36 | 2015-06-05 10:24 | 119 | -21.1d | 0d | AnhTT | 0.8h |
| 121 | 1.2.2.3.1.2.2 | **Bus module** | 3.3d | 2015-05-29 16:12 | 2015-06-04 09:36 |  | -17.7d | 0d |  | 16.8h |
| 122 | 1.2.2.3.1.2.2.1 | Bus list module | 0.1d | 2015-05-29 16:12 | 2015-05-29 17:00 | 108 | -17d | 0d | MaiTTT | 0.8h |
| 123 | 1.2.2.3.1.2.2.2 | Bus info module | 0.3d | 2015-06-02 15:24 | 2015-06-03 08:48 | 122 | -17.1d | 0d | MaiTTT | 2.4h |
| 124 | 1.2.2.3.1.2.2.3 | Bus route module | 0.2d | 2015-06-03 13:00 | 2015-06-03 14:36 | 123 | -17.2d | 0d | MaiTTT | 1.6h |
| 125 | 1.2.2.3.1.2.2.4 | Bus nearest module | 0.3d | 2015-06-03 14:36 | 2015-06-03 17:00 | 124 | -17.2d | 0d | MaiTTT | 2.4h |
| 126 | 1.2.2.3.1.2.2.5 | Bus map module | 0.2d | 2015-06-04 08:00 | 2015-06-04 09:36 | 125 | -17.2d | 0d | MaiTTT | 1.6h |
| 127 | 1.2.2.3.1.2.2.6 | Set/unset favorite bus module | 0.1d | 2015-05-29 16:12 | 2015-05-29 17:00 | 108 | -17.7d | 0d | CuongNLT | 0.8h |
| 128 | 1.2.2.3.1.2.2.7 | Remind module | 0.3d | 2015-06-01 08:00 | 2015-06-01 10:24 | 127 | -17.7d | 0d | CuongNLT | 2.4h |
| 129 | 1.2.2.3.1.2.2.8 | Track module | 0.2d | 2015-06-01 10:24 | 2015-06-01 12:00 | 128 | -17.7d | 0d | CuongNLT | 1.6h |
| 130 | 1.2.2.3.1.2.2.9 | Get notification module | 0.3d | 2015-06-01 13:00 | 2015-06-01 15:24 | 129 | -17.7d | 0d | CuongNLT | 2.4h |
| 131 | 1.2.2.3.1.2.2.10 | Swap direction module | 0.1d | 2015-06-01 15:24 | 2015-06-01 16:12 | 130 | -17.7d | 0d | CuongNLT | 0.8h |
| 132 | 1.2.2.3.1.2.3 | **Shigeki module** | 1.6d | 2015-05-29 16:12 | 2015-06-02 12:00 |  | -18.3d | 0d |  | 12.8h |
| 133 | 1.2.2.3.1.2.3.1 | Achievement module | 0.3d | 2015-05-29 16:12 | 2015-06-01 09:36 | 108 | -18.3d | 0d | NamNT | 2.4h |
| 134 | 1.2.2.3.1.2.3.2 | Collection module | 0.3d | 2015-06-01 09:36 | 2015-06-01 12:00 | 133 | -18.3d | 0d | NamNT | 2.4h |
| 135 | 1.2.2.3.1.2.3.3 | Mission module | 0.3d | 2015-06-01 13:00 | 2015-06-01 15:24 | 134 | -18.3d | 0d | NamNT | 2.4h |
| 136 | 1.2.2.3.1.2.3.4 | Statistic module | 0.3d | 2015-06-01 15:24 | 2015-06-02 08:48 | 135 | -18.3d | 0d | NamNT | 2.4h |
| 137 | 1.2.2.3.1.2.3.5 | Rank module | 0.1d | 2015-06-02 08:48 | 2015-06-02 09:36 | 136 | -18.3d | 0d | NamNT | 0.8h |
| 138 | 1.2.2.3.1.2.3.6 | Scan QR code module | 0.3d | 2015-06-02 09:36 | 2015-06-02 12:00 | 137 | -18.3d | 0d | NamNT | 2.4h |

| ID | WBS | Task | Type | Duration | Start | Finish | Predecessors | Total slack | Free slack | Resources | Work |
| --- | --- | --- | --- | --- | --- | --- | --- | --- | --- | --- | --- |
| 139 | 1.2.2.3.1.2.4 | **Search module** |  | 0.6d | 2015-05-29 16:12 | 2015-06-01 12:00 |  | -18d | 0d |  | 4.8h |
| 140 | 1.2.2.3.1.2.4.1 | Search bus module |  | 0.1d | 2015-05-29 16:12 | 2015-05-29 17:00 | 108 | -18d | 0d | PhuongBB | 0.8h |
| 141 | 1.2.2.3.1.2.4.2 | Search route module |  | 0.3d | 2015-06-01 08:00 | 2015-06-01 10:24 | 140 | -18d | 0d | PhuongBB | 2.4h |
| 142 | 1.2.2.3.1.2.4.3 | Search Favorite bus module |  | 0.1d | 2015-06-01 10:24 | 2015-06-01 11:12 | 141 | -18d | 0d | PhuongBB | 0.8h |
| 143 | 1.2.2.3.1.2.4.4 | Search Favorite place module |  | 0.1d | 2015-06-01 11:12 | 2015-06-01 12:00 | 142 | -18d | 0d | PhuongBB | 0.8h |
| 144 | 1.2.2.3.1.2.5 | Setting module |  | 0.5d | 2015-06-01 13:00 | 2015-06-01 17:00 | 143 | -18d | 0d | PhuongBB | 4h |
| 145 | 1.2.2.3.2 | Review Detailed Design with checklist |  | 1d | 2015-06-05 10:24 | 2015-06-08 10:24 | 102, 112, 120, 131, 138, 144 | -21.1d | 0d | MaiTTT; PhuongBB | 8h |
| 146 | 1.2.2.3.3 | Update Detailed Design |  | 1.8d | 2015-06-08 10:24 | 2015-06-10 08:48 | 145 | -21.1d | 0d | NamNT; CuongNLT; MaiTTT; PhuongBB; AnhTT | 21.6h |
| 147 | 1.2.2.3.4 | Complete Detailed Design version 1.0 | milestone | 0d | 2015-06-01 17:00 | 2015-06-01 17:00 | 144 | -18d | 0d | NamNT |  |
| 148 | 1.2.2.4 | **Database design** |  | 1.8d | 2015-05-29 16:12 | 2015-06-02 14:36 |  | -21.6d | 0d |  | 14.4h |
| 149 | 1.2.2.4.1 | Create Databse Design draft version |  | 1d | 2015-05-29 16:12 | 2015-06-01 16:12 | 108 | -21.6d | 0d | AnhTT | 8h |
| 150 | 1.2.2.4.2 | Review Database Design with checklist |  | 0.5d | 2015-06-01 16:12 | 2015-06-02 11:12 | 101, 149 | -21.6d | 0d | MaiTTT; PhuongBB | 4h |
| 151 | 1.2.2.4.3 | Update Database Design |  | 0.3d | 2015-06-02 11:12 | 2015-06-02 14:36 | 150 | -21.6d | 0d | AnhTT | 2.4h |
| 152 | 1.2.2.4.4 | Complete Database Design version 1.0 | milestone | 0d | 2015-06-02 14:36 | 2015-06-02 14:36 | 151 | -21.6d | 0d | AnhTT |  |
| 153 | 1.2.2.5 | **Class design** |  | 2.9d | 2015-06-02 14:36 | 2015-06-05 13:48 |  | -21.6d | 0d |  | 22.4h |
| 154 | 1.2.2.5.1 | Define class/component |  | 2d | 2015-06-02 14:36 | 2015-06-04 14:36 | 152 | -21.6d | 0d | AnhTT | 16h |
| 155 | 1.2.2.5.2 | Review Class Design with checklist |  | 0.5d | 2015-06-04 14:36 | 2015-06-05 09:36 | 154 | -21.6d | 0d | MaiTTT; PhuongBB | 4h |
| 156 | 1.2.2.5.3 | Update Class Design |  | 0.3d | 2015-06-05 10:24 | 2015-06-05 13:48 | 155 | -21.6d | 0d | AnhTT | 2.4h |
| 157 | 1.2.2.5.4 | Complete Class Design version 1.0 | milestone | 0d | 2015-06-05 13:48 | 2015-06-05 13:48 | 156 | -21.6d | 0d | AnhTT |  |
| 158 | 1.2.3 | Complete design | milestone | 0d | 2015-06-05 13:48 | 2015-06-05 13:48 | 108, 147, 152, 157 | -18.6d | 0d | NamNT |  |
| 159 | 1.2.4 | **Progress Report 2** |  | 0.5d | 2015-06-05 13:48 | 2015-06-08 08:48 |  | -21.6d | 0d |  | 4h |
| 160 | 1.2.4.1 | Develop Progress Report 2 |  | 0.3d | 2015-06-05 13:48 | 2015-06-05 16:12 | 147, 152, 157 | -21.6d | 0d | NamNT | 2.4h |
| 161 | 1.2.4.2 | Review Progress Report 2 |  | 0.1d | 2015-06-05 16:12 | 2015-06-05 17:00 | 160 | -21.6d | 0d | MaiTTT | 0.8h |
| 162 | 1.2.4.3 | Update Progress Report 2 |  | 0.1d | 2015-06-08 08:00 | 2015-06-08 08:48 | 161 | -21.6d | 0d | NamNT | 0.8h |
| 163 | 1.2.4.4 | Complete Progress Report 2 | milestone | 0d | 2015-06-08 08:48 | 2015-06-08 08:48 | 162 | -21.6d | 0d | NamNT |  |
| 164 | 1.2.5 | Q & A Management (update) |  | 0.5d | 2015-05-28 11:12 | 2015-05-28 16:12 | 96 | -15.4d | 0d | MaiTTT | 4h |

| ID | WBS | Task | Type | Duration | Start | Finish | Predecessors | Total slack | Free slack | Resources | Work |
| --- | --- | --- | --- | --- | --- | --- | --- | --- | --- | --- | --- |
| 165 | 1.2.6 | **Report no.2** |  | 2.5d | 2015-06-08 08:48 | 2015-06-10 13:48 |  | -21.6d | 0d |  | 44.8h |
| 166 | 1.2.6.1 | Develop Report no.2 (draft version) |  | 0.1d | 2015-06-08 08:48 | 2015-06-08 09:36 | 96, 108, 147, 152, 157, 163, 164, 102 | -21.6d | 0d | NamNT | 0.8h |
| 167 | 1.2.6.2 | Review Report no.2 (draft version) |  | 0.5d | 2015-06-08 09:36 | 2015-06-08 14:36 | 166 | -21.6d | 0d | NamNT; CuongNLT | 8h |
| 168 | 1.2.6.3 | Update Report no.2 (draft version) |  | 0.4d | 2015-06-08 14:36 | 2015-06-09 08:48 | 167 | -21.6d | 0d | NamNT; CuongNLT; MaiTTT; PhuongBB; AnhTT | 16h |
| 169 | 1.2.6.4 | Submit Report no.2 (first version) | milestone | 0d | 2015-06-09 08:48 | 2015-06-09 08:48 | 168 | -21.6d | 0d | NamNT |  |
| 170 | 1.2.6.5 | Revise after got comments for Report no.2 |  | 1.4d | 2015-06-09 08:48 | 2015-06-10 13:48 | 169 | -21.6d | 0d | NamNT; CuongNLT; MaiTTT; PhuongBB; AnhTT | 20h |
| 171 | 1.2.6.6 | Submit Report no.2 (final version) | milestone | 0d | 2015-06-10 13:48 | 2015-06-10 13:48 | 170 | -21.6d | 0d | NamNT |  |
| 172 | 1.2.7 | **Coding & Unit Testing** |  | 1d | 2015-06-05 13:48 | 2015-06-08 13:48 |  | -20.6d | 0d |  | 8h |
| 173 | 1.2.7.1 | **Bus Driver Module** |  | 1d | 2015-06-05 13:48 | 2015-06-08 13:48 |  | -20.6d | 0d |  | 8h |
| 174 | 1.2.7.1.1 | Send bus info module |  | 1d | 2015-06-05 13:48 | 2015-06-08 13:48 | 108, 147, 152, 157 | -20.6d | 0d | AnhTT | 8h |
| 175 | 1.2.8 | **Testing** |  | 18.3d? | 2015-05-11 08:00 | 2015-06-04 10:24 |  | -17.3d | 0d |  | 27.2h |
| 176 | 1.2.8.1 | **Test review checklist** |  | 3.3d | 2015-05-29 16:12 | 2015-06-04 09:36 |  | -17.8d | 0d |  | 12.8h |
| 177 | 1.2.8.1.1 | **Test plan review checklist** |  | 1.8d | 2015-05-29 16:12 | 2015-06-02 14:36 |  | -17.7d | 0d |  | 4.8h |
| 178 | 1.2.8.1.1.1 | Develop test plan review checklist |  | 0.3d | 2015-05-29 16:12 | 2015-06-02 09:36 | 108 | -17.7d | 0d | PhuongBB | 2.4h |
| 179 | 1.2.8.1.1.2 | Review test plan review checklist |  | 0.2d | 2015-06-02 11:12 | 2015-06-02 13:48 | 178 | -17.7d | 0d | MaiTTT | 1.6h |
| 180 | 1.2.8.1.1.3 | Update test plan review checklist |  | 0.1d | 2015-06-02 13:48 | 2015-06-02 14:36 | 179 | -17.7d | 0d | PhuongBB | 0.8h |
| 181 | 1.2.8.1.1.4 | Complete test plan review checklist | milestone | 0d | 2015-06-02 14:36 | 2015-06-02 14:36 | 180 | -17.7d | 0d | PhuongBB |  |
| 182 | 1.2.8.1.2 | **Test case review checklist** |  | 3.3d | 2015-05-29 16:12 | 2015-06-04 09:36 |  | -17.8d | 0d |  | 8h |
| 183 | 1.2.8.1.2.1 | Develop test case review checklist |  | 0.5d | 2015-05-29 16:12 | 2015-06-03 12:00 | 108 | -17.8d | 0d | MaiTTT | 4h |
| 184 | 1.2.8.1.2.2 | Review test case review checklist |  | 0.3d | 2015-06-03 13:00 | 2015-06-03 15:24 | 183 | -17.8d | 0d | PhuongBB | 2.4h |
| 185 | 1.2.8.1.2.3 | Update test case review checklist |  | 0.2d | 2015-06-04 08:00 | 2015-06-04 09:36 | 184 | -17.2d | 0d | MaiTTT | 1.6h |
| 186 | 1.2.8.1.2.4 | Complete test case review checklist | milestone | 0d | 2015-06-04 09:36 | 2015-06-04 09:36 | 185 | -17.2d | 0d | MaiTTT |  |
| 187 | 1.2.8.1.3 | Complete review checklist | milestone | 0d | 2015-06-04 09:36 | 2015-06-04 09:36 | 181, 186 | -17.2d | 0d | MaiTTT; PhuongBB |  |
| 188 | 1.2.8.2 | **Test plan** |  | 3.4d | 2015-05-29 16:12 | 2015-06-04 10:24 |  | -17.8d | 0d |  | 14.4h |
| 189 | 1.2.8.2.1 | Develop test plan |  | 1d | 2015-05-29 16:12 | 2015-06-02 15:24 | 108 | -17.8d | 0d | MaiTTT | 8h |
| 190 | 1.2.8.2.2 | Review test plan |  | 0.5d | 2015-06-03 08:00 | 2015-06-03 12:00 | 189, 181 | -17.5d | 0d | NamNT | 4h |
| 191 | 1.2.8.2.3 | Update test plan |  | 0.3d | 2015-06-04 08:00 | 2015-06-04 10:24 | 190 | -17.3d | 0d | MaiTTT | 2.4h |
| 192 | 1.2.8.2.4 | Complete test plan | milestone | 0d | 2015-06-04 10:24 | 2015-06-04 10:24 | 191 | -17.3d | 0d | MaiTTT |  |

| ID | WBS | Task | Type | Duration | Start | Finish | Total slack | Free slack | Resources | Work |
| --- | --- | --- | --- | --- | --- | --- | --- | --- | --- | --- |
| 193 | 1.2.8.3 | **Test case** |  | 1d? | 2015-05-11 08:00 | 2015-05-11 17:00 | 0d |  |  |  |
| 194 | 1.2.8.3.1 | **Unit test** |  | 1d? | 2015-05-11 08:00 | 2015-05-11 17:00 | 0d |  |  |  |
| 195 | 1.2.8.3.1.1 | **Develop unit test case** |  | 1d? | 2015-05-11 08:00 | 2015-05-11 17:00 | 0d |  |  |  |
| 196 | 1.2.8.3.1.1.1 | Bus driver module |  | 1d | 2015-05-11 08:00 | 2015-05-11 17:00 | 0d |  |  |  |
| 197 | 1.2.8.3.1.1.2 | Account module |  | 1d? | 2015-05-11 08:00 | 2015-05-11 17:00 | 0d |  |  |  |
| 198 | 1.2.8.3.1.1.3 | Sync module |  | 1d? | 2015-05-11 08:00 | 2015-05-11 17:00 | 0d |  |  |  |
| 199 | 1.2.8.3.1.1.4 | Bus module |  | 1d | 2015-05-11 08:00 | 2015-05-11 17:00 | 0d |  |  |  |
| 200 | 1.2.8.3.1.1.5 | Shigeki module |  | 1d | 2015-05-11 08:00 | 2015-05-11 17:00 | 0d |  |  |  |
| 201 | 1.2.8.3.1.1.6 | Search module |  | 1d | 2015-05-11 08:00 | 2015-05-11 17:00 | 0d |  |  |  |
| 202 | 1.2.8.3.1.1.7 | Setting module |  | 1d? | 2015-05-11 08:00 | 2015-05-11 17:00 | 0d |  |  |  |
| 203 | 1.2.8.3.1.2 | Review unit test case |  | 1d | 2015-05-11 08:00 | 2015-05-11 17:00 | 0d |  |  |  |
| 204 | 1.2.8.3.1.3 | Update unit test case |  | 1d | 2015-05-11 08:00 | 2015-05-11 17:00 | 0d |  |  |  |
| 205 | 1.2.8.3.1.4 | Complete unit test case | milestone | 0d | 2015-05-11 08:00 | 2015-05-11 08:00 | 1d |  |  |  |
| 206 | 1.2.8.3.2 | **Integration test** |  | 1d | 2015-05-11 08:00 | 2015-05-11 17:00 | 0d |  |  |  |
| 207 | 1.2.8.3.2.1 | Develop integration test case |  | 1d | 2015-05-11 08:00 | 2015-05-11 17:00 | 0d |  |  |  |
| 208 | 1.2.8.3.2.2 | Review integration test case |  | 1d | 2015-05-11 08:00 | 2015-05-11 17:00 | 0d |  |  |  |
| 209 | 1.2.8.3.2.3 | Update integration test case |  | 1d | 2015-05-11 08:00 | 2015-05-11 17:00 | 0d |  |  |  |
| 210 | 1.2.8.3.2.4 | Complete integration test case | milestone | 0d | 2015-05-11 08:00 | 2015-05-11 08:00 | 1d |  |  |  |
| 211 | 1.2.8.3.3 | **System test** |  | 1d | 2015-05-11 08:00 | 2015-05-11 17:00 | 0d |  |  |  |
| 212 | 1.2.8.3.3.1 | Develop system test case |  | 1d | 2015-05-11 08:00 | 2015-05-11 17:00 | 0d |  |  |  |
| 213 | 1.2.8.3.3.2 | Review system test case |  | 1d | 2015-05-11 08:00 | 2015-05-11 17:00 | 0d |  |  |  |
| 214 | 1.2.8.3.3.3 | Update system test case |  | 1d | 2015-05-11 08:00 | 2015-05-11 17:00 | 0d |  |  |  |
| 215 | 1.2.8.3.3.4 | Complete system test case | milestone | 0d | 2015-05-11 08:00 | 2015-05-11 08:00 | 1d |  |  |  |
| 216 | 1.2.9 | Progress report 3 |  | 1d | 2015-05-11 08:00 | 2015-05-11 17:00 | 0d |  |  |  |
| 217 | 1.2.10 | Q & A Management (update) |  | 0.5d | 2015-05-20 13:00 | 2015-05-21 09:36 | -7.2d | 0d | MaiTTT | 4h |

| ID | WBS | Task | Type | Duration | Start | Finish | Predecessors | Total slack | Free slack | Resources | Work |
| --- | --- | --- | --- | --- | --- | --- | --- | --- | --- | --- | --- |
| 218 | 1.2.11 | **Report no.3** |  | 7.2d | 2015-05-11 08:00 | 2015-05-20 09:36 |  | -6.2d | 0d |  | 1.6h |
| 219 | 1.2.11.1 | Develop Report no.3 (draft version) |  | 0.2d | 2015-05-20 08:00 | 2015-05-20 09:36 |  | -6.2d | 0d | NamNT | 1.6h |
| 220 | 1.2.11.2 | Review Report no.3 (draft version) |  | 1d | 2015-05-11 08:00 | 2015-05-11 17:00 |  | 0d |  |  |  |
| 221 | 1.2.11.3 | Update Report no.3 (draft version) |  | 0.5d | 2015-05-11 08:00 | 2015-05-11 12:00 |  | 0.5d |  |  |  |
| 222 | 1.2.11.4 | Submit Report no.3 (first version) | milestone | 0d | 2015-05-11 08:00 | 2015-05-11 08:00 |  | 1d |  | NamNT |  |
| 223 | 1.2.11.5 | Revise after got comments for Report no.3 |  | 0.5d | 2015-05-11 08:00 | 2015-05-11 12:00 |  | 0.5d |  |  |  |
| 224 | 1.2.11.6 | Submit Report no.3 (final version) | milestone | 0d | 2015-05-11 08:00 | 2015-05-11 08:00 |  | 1d |  | NamNT |  |
| 225 | 1.3 | **Construction** |  | 21.6d? | 2015-05-11 08:00 | 2015-06-09 13:48 |  | -20.6d | 0d |  |  |
| 226 | 1.3.1 | **Code Review checklist** |  | 1d | 2015-05-11 08:00 | 2015-05-11 17:00 |  | 0d |  |  |  |
| 227 | 1.3.1.1 | Develop review checklist |  | 1d | 2015-05-11 08:00 | 2015-05-11 17:00 |  | 0d |  |  |  |
| 228 | 1.3.1.2 | Review review checklist |  | 1d | 2015-05-11 08:00 | 2015-05-11 17:00 |  | 0d |  |  |  |
| 229 | 1.3.1.3 | Update review checklist |  | 1d | 2015-05-11 08:00 | 2015-05-11 17:00 |  | 0d |  |  |  |
| 230 | 1.3.1.4 | Complete review checklist |  | 1d | 2015-05-11 08:00 | 2015-05-11 17:00 |  | 0d |  |  |  |
| 231 | 1.3.2 | **Coding & Unit testing (continue)** |  | 21.6d? | 2015-05-11 08:00 | 2015-06-09 13:48 |  | -20.6d | 0d |  |  |
| 232 | 1.3.2.1 | **Bus Rider Module** |  | 21.6d? | 2015-05-11 08:00 | 2015-06-09 13:48 |  | -20.6d | 0d |  |  |
| 233 | 1.3.2.1.1 | **Sync module** |  | 21.6d? | 2015-05-11 08:00 | 2015-06-09 13:48 |  | -20.6d | 0d |  |  |
| 234 | 1.3.2.1.1.1 | PhoneNumberSync module |  | 1d? | 2015-06-08 13:48 | 2015-06-09 13:48 | 174 | -20.6d | 0d |  |  |
| 235 | 1.3.2.1.1.2 | Connect Facebook module |  | 1d | 2015-05-11 08:00 | 2015-05-11 17:00 |  | 0d |  |  |  |
| 236 | 1.3.2.1.1.3 | Show Favorite place module |  | 1d | 2015-05-11 08:00 | 2015-05-11 17:00 |  | 0d |  |  |  |
| 237 | 1.3.2.1.1.4 | Show Favorite bus module |  | 1d | 2015-05-11 08:00 | 2015-05-11 17:00 |  | 0d |  |  |  |
| 238 | 1.3.2.1.1.5 | Add/remove Favorite place module |  | 1d | 2015-05-11 08:00 | 2015-05-11 17:00 |  | 0d |  |  |  |
| 239 | 1.3.2.1.1.6 | About module |  | 1d | 2015-05-11 08:00 | 2015-05-11 17:00 |  | 0d |  |  |  |
| 240 | 1.3.2.1.2 | **Bus module** |  | 1d | 2015-05-11 08:00 | 2015-05-11 17:00 |  | 0d |  |  |  |
| 241 | 1.3.2.1.2.1 | Bus list module |  | 1d | 2015-05-11 08:00 | 2015-05-11 17:00 |  | 0d |  |  |  |
| 242 | 1.3.2.1.2.2 | Bus info module |  | 1d | 2015-05-11 08:00 | 2015-05-11 17:00 |  | 0d |  |  |  |
| 243 | 1.3.2.1.2.3 | Bus route module |  | 1d | 2015-05-11 08:00 | 2015-05-11 17:00 |  | 0d |  |  |  |
| 244 | 1.3.2.1.2.4 | Bus nearest module |  | 1d | 2015-05-11 08:00 | 2015-05-11 17:00 |  | 0d |  |  |  |
| 245 | 1.3.2.1.2.5 | Bus map module |  | 1d | 2015-05-11 08:00 | 2015-05-11 17:00 |  | 0d |  |  |  |
| 246 | 1.3.2.1.2.6 | Set/unset favorite bus module |  | 1d | 2015-05-11 08:00 | 2015-05-11 17:00 |  | 0d |  |  |  |
| 247 | 1.3.2.1.2.7 | Remind module |  | 1d | 2015-05-11 08:00 | 2015-05-11 17:00 |  | 0d |  |  |  |
| 248 | 1.3.2.1.2.8 | Track module |  | 1d | 2015-05-11 08:00 | 2015-05-11 17:00 |  | 0d |  |  |  |
| 249 | 1.3.2.1.2.9 | Get notification module |  | 1d | 2015-05-11 08:00 | 2015-05-11 17:00 |  | 0d |  |  |  |
| 250 | 1.3.2.1.2.10 | Swap direction module |  | 1d | 2015-05-11 08:00 | 2015-05-11 17:00 |  | 0d |  |  |  |

| ID | WBS | Task | Duration | Start | Finish | Total slack |
| --- | --- | --- | --- | --- | --- | --- |
| 251 | 1.3.2.1.3 | **Shigeki module** | 1d | 2015-05-11 08:00 | 2015-05-11 17:00 | 0d |
| 252 | 1.3.2.1.3.1 | Achievement module | 1d | 2015-05-11 08:00 | 2015-05-11 17:00 | 0d |
| 253 | 1.3.2.1.3.2 | Collection module | 1d | 2015-05-11 08:00 | 2015-05-11 17:00 | 0d |
| 254 | 1.3.2.1.3.3 | Mission module | 1d | 2015-05-11 08:00 | 2015-05-11 17:00 | 0d |
| 255 | 1.3.2.1.3.4 | Statistic module | 1d | 2015-05-11 08:00 | 2015-05-11 17:00 | 0d |
| 256 | 1.3.2.1.3.5 | Rank module | 1d | 2015-05-11 08:00 | 2015-05-11 17:00 | 0d |
| 257 | 1.3.2.1.3.6 | Scan QR code module | 1d | 2015-05-11 08:00 | 2015-05-11 17:00 | 0d |
| 258 | 1.3.2.1.4 | **Search module** | 1d | 2015-05-11 08:00 | 2015-05-11 17:00 | 0d |
| 259 | 1.3.2.1.4.1 | Search bus module | 1d | 2015-05-11 08:00 | 2015-05-11 17:00 | 0d |
| 260 | 1.3.2.1.4.2 | Search route module | 1d | 2015-05-11 08:00 | 2015-05-11 17:00 | 0d |
| 261 | 1.3.2.1.4.3 | Search Favorite bus module | 1d | 2015-05-11 08:00 | 2015-05-11 17:00 | 0d |
| 262 | 1.3.2.2 | Complete coding | 1d | 2015-05-11 08:00 | 2015-05-11 17:00 | 0d |
| 263 | 1.3.3 | Q & A Management (update) | 1d | 2015-05-11 08:00 | 2015-05-11 17:00 | 0d |
| 264 | 1.3.4 | Progress report 4 | 1d | 2015-05-11 08:00 | 2015-05-11 17:00 | 0d |
| 265 | 1.3.5 | **Report no.4** | 1d | 2015-05-11 08:00 | 2015-05-11 17:00 | 0d |
| 266 | 1.3.5.1 | Develop Report no.4 (draft version) | 1d | 2015-05-11 08:00 | 2015-05-11 17:00 | 0d |
| 267 | 1.3.5.2 | Review Report no.4 (draft version) | 1d | 2015-05-11 08:00 | 2015-05-11 17:00 | 0d |
| 268 | 1.3.5.3 | Update Report no.4 (draft version) | 1d | 2015-05-11 08:00 | 2015-05-11 17:00 | 0d |
| 269 | 1.3.5.4 | Submit Report no.4 (first version) | 1d | 2015-05-11 08:00 | 2015-05-11 17:00 | 0d |
| 270 | 1.3.5.5 | Revise after got comments for Report no.4 | 1d | 2015-05-11 08:00 | 2015-05-11 17:00 | 0d |
| 271 | 1.3.5.6 | Submit Report no.4 (final version) | 1d | 2015-05-11 08:00 | 2015-05-11 17:00 | 0d |
| 272 | 1.3.6 | **Testing** | 1d? | 2015-05-11 08:00 | 2015-05-11 17:00 | 0d |
| 273 | 1.3.6.1 | **Execute test & fix bugs** | 1d? | 2015-05-11 08:00 | 2015-05-11 17:00 | 0d |
| 274 | 1.3.6.1.1 | **Round 1** | 1d? | 2015-05-11 08:00 | 2015-05-11 17:00 | 0d |
| 275 | 1.3.6.1.1.1 | **Execute unit test** | 1d? | 2015-05-11 08:00 | 2015-05-11 17:00 | 0d |
| 276 | 1.3.6.1.1.1.1 | Bus driver module | 1d | 2015-05-11 08:00 | 2015-05-11 17:00 | 0d |
| 277 | 1.3.6.1.1.1.2 | Account module | 1d? | 2015-05-11 08:00 | 2015-05-11 17:00 | 0d |
| 278 | 1.3.6.1.1.1.3 | Sync module | 1d? | 2015-05-11 08:00 | 2015-05-11 17:00 | 0d |
| 279 | 1.3.6.1.1.1.4 | Bus module | 1d | 2015-05-11 08:00 | 2015-05-11 17:00 | 0d |
| 280 | 1.3.6.1.1.1.5 | Shigeki module | 1d | 2015-05-11 08:00 | 2015-05-11 17:00 | 0d |
| 281 | 1.3.6.1.1.1.6 | Search module | 1d | 2015-05-11 08:00 | 2015-05-11 17:00 | 0d |
| 282 | 1.3.6.1.1.1.7 | Setting module | 1d? | 2015-05-11 08:00 | 2015-05-11 17:00 | 0d |
| 283 | 1.3.6.1.1.2 | Fix bugs unit test | 1d | 2015-05-11 08:00 | 2015-05-11 17:00 | 0d |
| 284 | 1.3.6.1.1.3 | Execute integration test | 1d | 2015-05-11 08:00 | 2015-05-11 17:00 | 0d |
| 285 | 1.3.6.1.1.4 | Fix bugs integration test | 1d | 2015-05-11 08:00 | 2015-05-11 17:00 | 0d |
| 286 | 1.3.6.1.1.5 | Execute system test | 1d | 2015-05-11 08:00 | 2015-05-11 17:00 | 0d |
| 287 | 1.3.6.1.1.6 | Fix bugs system test | 1d | 2015-05-11 08:00 | 2015-05-11 17:00 | 0d |

| ID | WBS | Task | Duration | Start | Finish | Total slack |
| --- | --- | --- | --- | --- | --- | --- |
| 288 | 1.3.6.1.2 | **Round 2** | 1d? | 2015-05-11 08:00 | 2015-05-11 17:00 | 0d |
| 289 | 1.3.6.1.2.1 | **Execute unit test** | 1d? | 2015-05-11 08:00 | 2015-05-11 17:00 | 0d |
| 290 | 1.3.6.1.2.1.1 | Bus driver module | 1d | 2015-05-11 08:00 | 2015-05-11 17:00 | 0d |
| 291 | 1.3.6.1.2.1.2 | Account module | 1d? | 2015-05-11 08:00 | 2015-05-11 17:00 | 0d |
| 292 | 1.3.6.1.2.1.3 | Sync module | 1d? | 2015-05-11 08:00 | 2015-05-11 17:00 | 0d |
| 293 | 1.3.6.1.2.1.4 | Bus module | 1d | 2015-05-11 08:00 | 2015-05-11 17:00 | 0d |
| 294 | 1.3.6.1.2.1.5 | Shigeki module | 1d | 2015-05-11 08:00 | 2015-05-11 17:00 | 0d |
| 295 | 1.3.6.1.2.1.6 | Search module | 1d | 2015-05-11 08:00 | 2015-05-11 17:00 | 0d |
| 296 | 1.3.6.1.2.1.7 | Setting module | 1d? | 2015-05-11 08:00 | 2015-05-11 17:00 | 0d |
| 297 | 1.3.6.1.2.2 | Fix bugs unit test | 1d | 2015-05-11 08:00 | 2015-05-11 17:00 | 0d |
| 298 | 1.3.6.1.2.3 | Execute integration test | 1d | 2015-05-11 08:00 | 2015-05-11 17:00 | 0d |
| 299 | 1.3.6.1.2.4 | Fix bugs integration test | 1d | 2015-05-11 08:00 | 2015-05-11 17:00 | 0d |
| 300 | 1.3.6.1.2.5 | Execute system test | 1d | 2015-05-11 08:00 | 2015-05-11 17:00 | 0d |
| 301 | 1.3.6.1.2.6 | Fix bugs system test | 1d | 2015-05-11 08:00 | 2015-05-11 17:00 | 0d |
| 302 | 1.3.6.1.3 | Execute acceptance test & collect data | 1d | 2015-05-11 08:00 | 2015-05-11 17:00 | 0d |
| 303 | 1.3.6.2 | Complete execute test | 1d? | 2015-05-11 08:00 | 2015-05-11 17:00 | 0d |
| 304 | 1.3.6.3 | **Test Report** | 1d | 2015-05-11 08:00 | 2015-05-11 17:00 | 0d |
| 305 | 1.3.6.3.1 | Develop test report | 1d | 2015-05-11 08:00 | 2015-05-11 17:00 | 0d |
| 306 | 1.3.6.3.2 | Review test report | 1d | 2015-05-11 08:00 | 2015-05-11 17:00 | 0d |
| 307 | 1.3.6.3.3 | Update test report | 1d | 2015-05-11 08:00 | 2015-05-11 17:00 | 0d |
| 308 | 1.3.6.3.4 | Complete test report | 1d | 2015-05-11 08:00 | 2015-05-11 17:00 | 0d |
| 309 | 1.3.7 | **Quality report** | 1d | 2015-05-11 08:00 | 2015-05-11 17:00 | 0d |
| 310 | 1.3.7.1 | Develop quality report | 1d | 2015-05-11 08:00 | 2015-05-11 17:00 | 0d |
| 311 | 1.3.7.2 | Review quality report | 1d | 2015-05-11 08:00 | 2015-05-11 17:00 | 0d |
| 312 | 1.3.7.3 | Update quality report | 1d | 2015-05-11 08:00 | 2015-05-11 17:00 | 0d |
| 313 | 1.3.7.4 | Complete quality report | 1d | 2015-05-11 08:00 | 2015-05-11 17:00 | 0d |
| 314 | 1.3.8 | Progress report 5 | 1d | 2015-05-11 08:00 | 2015-05-11 17:00 | 0d |

| ID | WBS | Task | Duration | Start | Finish | Total slack |
| --- | --- | --- | --- | --- | --- | --- |
| 315 | 1.3.9 | **Report no.5** | 1d | 2015-05-11 08:00 | 2015-05-11 17:00 | 0d |
| 316 | 1.3.9.1 | Develop Report no.5 (draft version) | 1d | 2015-05-11 08:00 | 2015-05-11 17:00 | 0d |
| 317 | 1.3.9.2 | Review Report no.5 (draft version) | 1d | 2015-05-11 08:00 | 2015-05-11 17:00 | 0d |
| 318 | 1.3.9.3 | Update Report no.5 (draft version) | 1d | 2015-05-11 08:00 | 2015-05-11 17:00 | 0d |
| 319 | 1.3.9.4 | Submit Report no.5 (first version) | 1d | 2015-05-11 08:00 | 2015-05-11 17:00 | 0d |
| 320 | 1.3.9.5 | Revise after got comments for Report no.5 | 1d | 2015-05-11 08:00 | 2015-05-11 17:00 | 0d |
| 321 | 1.3.9.6 | Submit Report no.5 (final version) | 1d | 2015-05-11 08:00 | 2015-05-11 17:00 | 0d |
| 322 | 1.4 | **Termination** | 1d | 2015-05-11 08:00 | 2015-05-11 17:00 | 0d |
| 323 | 1.4.1 | **Report no.6** | 1d | 2015-05-11 08:00 | 2015-05-11 17:00 | 0d |
| 324 | 1.4.1.1 | Complete source code & final report | 1d | 2015-05-11 08:00 | 2015-05-11 17:00 | 0d |
| 325 | 1.4.1.2 | Develop installation guide | 1d | 2015-05-11 08:00 | 2015-05-11 17:00 | 0d |
| 326 | 1.4.1.3 | Develop user guideline | 1d | 2015-05-11 08:00 | 2015-05-11 17:00 | 0d |
| 327 | 1.4.1.4 | Complete Project Result Assessment | 1d | 2015-05-11 08:00 | 2015-05-11 17:00 | 0d |
| 328 | 1.4.1.5 | Conduct lessons learned | 1d | 2015-05-11 08:00 | 2015-05-11 17:00 | 0d |
| 329 | 1.4.1.6 | Complete Presentation slide | 1d | 2015-05-11 08:00 | 2015-05-11 17:00 | 0d |
| 330 | 1.4.1.7 | Review Report no.6 (draft version) | 1d | 2015-05-11 08:00 | 2015-05-11 17:00 | 0d |
| 331 | 1.4.1.8 | Update Report no.6 (draft version) | 1d | 2015-05-11 08:00 | 2015-05-11 17:00 | 0d |
| 332 | 1.4.1.9 | Submit Report no.6 (first version) | 1d | 2015-05-11 08:00 | 2015-05-11 17:00 | 0d |
| 333 | 1.4.1.10 | Revise after got comments for Report no.6 | 1d | 2015-05-11 08:00 | 2015-05-11 17:00 | 0d |
| 334 | 1.4.1.11 | Submit Report no.6 (final version) | 1d | 2015-05-11 08:00 | 2015-05-11 17:00 | 0d |
| 335 | 1.4.1.12 | Submit Final report & CD source code | 1d | 2015-05-11 08:00 | 2015-05-11 17:00 | 0d |
| 336 | 1.4.2 | **Pre-closing** | 1d | 2015-05-11 08:00 | 2015-05-11 17:00 | 0d |
| 337 | 1.4.2.1 | Training presentation | 1d | 2015-05-11 08:00 | 2015-05-11 17:00 | 0d |
| 338 | 1.4.3 | **Closing** | 1d | 2015-05-11 08:00 | 2015-05-11 17:00 | 0d |
| 339 | 1.4.3.1 | Present Capstone Project & Completed | 1d | 2015-05-11 08:00 | 2015-05-11 17:00 | 0d |
